# ACC 2015

How a schedule from MS Project changed from version to version. A marks actual dates.

## Version 1 (data date 2015-05-08, saved 2015-11-30)

| ID | WBS | Task | Duration | Start | Finish | Predecessors | Complete | Total float |
| --- | --- | --- | --- | --- | --- | --- | --- | --- |
| 1 | 1 | **Update report layout** | 7.88d | 2015-11-26 08:00 A | 2015-12-07 16:00 |  | 56% | 0d |
| 2 | 1.1 | **Quản lý tiền** | 1.25d | 2015-11-26 08:00 A | 2015-11-27 10:00 A |  | 100% |  |
| 3 |  | Nghiệp vụ | 6h | 2015-11-26 08:00 A | 2015-11-26 15:00 A |  | 100% |  |
| 4 |  | Báo cáo | 4h | 2015-11-26 15:00 A | 2015-11-27 10:00 A | 3 | 100% |  |
| 5 | 1.2 | **Mua hàng** | 1.5d | 2015-11-27 10:00 A | 2015-11-30 15:00 |  | 63% | 0d |
| 6 |  | Nghiệp vụ | 4h | 2015-11-27 10:00 | 2015-11-27 15:00 | 4 |  | 0.95d |
| 7 |  | Báo cáo | 8h | 2015-11-27 15:00 A | 2015-11-30 15:00 | 6 | 95% | 0d |
| 8 | 1.3 | **Công nợ phải trả** | 1.38d | 2015-11-30 15:00 | 2015-12-02 09:00 |  |  | 0d |
| 9 |  | Nghiệp vụ | 5h | 2015-11-30 15:00 | 2015-12-01 11:00 | 7 |  | 0d |
| 10 |  | Báo cáo | 6h | 2015-12-01 11:00 | 2015-12-02 09:00 | 9 |  | 0d |
| 11 | 1.4 | **Bán hàng** | 1.62d | 2015-12-02 09:00 | 2015-12-03 15:00 |  |  | 0d |
| 12 |  | Nghiệp vụ | 4h | 2015-12-02 09:00 | 2015-12-02 14:00 | 10 |  | 0d |
| 13 |  | Báo cáo | 9h | 2015-12-02 14:00 | 2015-12-03 15:00 | 12 |  | 0d |
| 14 | 1.5 | **Công nợ phải thu** | 1.62d | 2015-12-03 15:00 | 2015-12-07 11:00 |  |  | 0d |
| 15 |  | Nghiệp vụ | 6h | 2015-12-03 15:00 | 2015-12-04 12:00 | 13 |  | 0d |
| 16 |  | Báo cáo | 7h | 2015-12-04 13:00 | 2015-12-07 11:00 | 15 |  | 0d |
| 17 | 1.6 | **Quản lý kho** | 7.88d | 2015-11-26 08:00 A | 2015-12-07 16:00 |  | 56% | 0d |
| 18 |  | Nghiệp vụ | 4h | 2015-12-07 11:00 | 2015-12-07 16:00 | 16 |  | 0d |
| 19 |  | Báo cáo | 5h | 2015-11-26 08:00 A | 2015-11-26 14:00 A |  | 100% |  |
| 20 | 1.7 | **Tài sản cố định** | 0.62d | 2015-11-26 14:00 A | 2015-11-27 10:00 A |  | 100% |  |
| 21 |  | Nghiệp vụ | 2h | 2015-11-26 14:00 A | 2015-11-26 16:00 A | 19 | 100% |  |
| 22 |  | Báo cáo | 3h | 2015-11-26 16:00 A | 2015-11-27 10:00 A | 21 | 100% |  |
| 23 | 1.8 | **Chi phí giá thành** | 0.75d | 2015-11-27 10:00 A | 2015-11-27 17:00 A |  | 100% |  |
| 24 |  | Nghiệp vụ | 2h | 2015-11-27 10:00 A | 2015-11-27 12:00 A | 22 | 100% |  |
| 25 |  | Báo cáo | 4h | 2015-11-27 13:00 A | 2015-11-27 17:00 A | 24 | 100% |  |
| 26 | 1.9 | **Thuế GTGT** | 1d | 2015-11-30 08:00 A | 2015-11-30 17:00 A |  | 100% |  |
| 27 |  | Nghiệp vụ | 2h | 2015-11-30 08:00 A | 2015-11-30 10:00 A | 25 | 100% |  |
| 28 |  | Báo cáo | 6h | 2015-11-30 10:00 A | 2015-11-30 17:00 A | 27 | 100% |  |
| 29 | 1.10 | **Thuế Khác** | 0.75d | 2015-12-01 08:00 A | 2015-12-01 15:00 A |  | 100% |  |
| 30 |  | Nghiệp vụ | 2h | 2015-12-01 08:00 A | 2015-12-01 10:00 A | 28 | 100% |  |
| 31 |  | Báo cáo | 4h | 2015-12-01 10:00 A | 2015-12-01 15:00 A | 30 | 100% |  |
| 32 | 1.11 | **Tổng hợp** | 1.25d | 2015-12-01 15:00 A | 2015-12-02 17:00 A |  | 100% |  |
| 33 |  | Nghiệp vụ | 3h | 2015-12-01 15:00 A | 2015-12-02 09:00 A | 31 | 100% |  |
| 34 |  | Báo cáo | 7h | 2015-12-02 09:00 A | 2015-12-02 17:00 A | 33 | 100% |  |

## Version 2 (data date 2015-05-08, saved 2015-11-30)

Note of the change: Huyền cập nhập tiến độ

Last finish stays 2015-12-07. Complete tasks 13 → 19.

Changed:

| ID | Task | Start | Finish | Complete | Total float |
| --- | --- | --- | --- | --- | --- |
| 1 | **Update report layout** |  |  | 56% → 83% |  |
| 5 | **Mua hàng** |  | 2015-11-30 15:00 A | 63% → 100% | 0d → none |
| 6 | Nghiệp vụ | 2015-11-27 10:00 A | 2015-11-27 15:00 A | 0% → 100% | 0.95d → none |
| 7 | Báo cáo |  | 2015-11-30 15:00 A | 95% → 100% | 0d → none |
| 8 | **Công nợ phải trả** | 2015-11-30 15:00 A | 2015-12-02 09:00 A | 0% → 100% | 0d → none |
| 9 | Nghiệp vụ | 2015-11-30 15:00 A | 2015-12-01 11:00 A | 0% → 100% | 0d → none |
| 10 | Báo cáo | 2015-12-01 11:00 A | 2015-12-02 09:00 A | 0% → 100% | 0d → none |
| 11 | **Bán hàng** | 2015-12-02 09:00 A | 2015-12-03 15:00 A | 0% → 100% | 0d → none |
| 12 | Nghiệp vụ | 2015-12-02 09:00 A | 2015-12-02 14:00 A | 0% → 100% | 0d → none |
| 13 | Báo cáo | 2015-12-02 14:00 A | 2015-12-03 15:00 A | 0% → 100% | 0d → none |

## Version 3 (data date 2015-05-08, saved 2015-12-01)

Note of the change: Huyền, cập nhập tiến độ đã hoàn thành

Last finish stays 2015-12-07. Complete tasks 19 → 22.

Changed:

| ID | Task | Start | Finish | Complete | Total float |
| --- | --- | --- | --- | --- | --- |
| 1 | **Update report layout** |  | 2015-12-07 16:00 A | 83% → 100% | 0d → none |
| 14 | **Công nợ phải thu** | 2015-12-03 15:00 A | 2015-12-07 11:00 A | 0% → 100% | 0d → none |
| 15 | Nghiệp vụ | 2015-12-03 15:00 A | 2015-12-04 12:00 A | 0% → 100% | 0d → none |
| 16 | Báo cáo | 2015-12-04 13:00 A | 2015-12-07 11:00 A | 0% → 100% | 0d → none |
| 17 | **Quản lý kho** |  | 2015-12-07 16:00 A | 56% → 100% | 0d → none |
| 18 | Nghiệp vụ | 2015-12-07 11:00 A | 2015-12-07 16:00 A | 0% → 100% | 0d → none |
