# ERPNET_Implement_TAX

How a schedule from MS Project changed from version to version. A marks actual dates.

## Version 1 (data date 2015-05-08, saved 2015-12-16)

| ID | WBS | Task | Duration | Start | Finish | Predecessors | Complete | Total float | Constraint |
| --- | --- | --- | --- | --- | --- | --- | --- | --- | --- |
| 1 | 1 | **ACC 2015** | 181.88d | 2015-06-29 08:00 A | 2016-03-08 16:00 |  | 17% | 0d |  |
| 2 | 1.1 | **Báo cáo thuế** | 181.88d | 2015-06-29 08:00 A | 2016-03-08 16:00 |  | 17% | 0d |  |
| 3 | 1.1.1 | **Analyze** | 171d | 2015-06-29 08:00 A | 2016-02-22 17:00 |  | 47% | 0d |  |
| 4 | 1.1.1.1 | **Danh mục chung** | 148.12d | 2015-06-29 08:00 A | 2016-01-21 09:00 |  | 67% | 3.75d |  |
| 5 |  | Danh mục gia hạn | 4h | 2015-06-29 08:00 A | 2015-06-29 12:00 A |  | 100% |  | start no earlier than 2015-06-29 08:00 |
| 6 |  | Danh mục ngành nghể | 4h | 2015-06-29 13:00 A | 2015-06-29 17:00 A | 5 | 100% |  |  |
| 7 |  | Danh mục ngành nghề có tỷ lệ thu nhập cao | 4h | 2016-01-20 14:00 | 2016-01-21 09:00 | 37 |  | 3.75d |  |
| 8 | 1.1.1.2 | **Thuế thu giá trị gia tăng** | 3.75d | 2015-06-30 08:00 A | 2015-07-03 15:00 A |  | 100% |  |  |
| 9 | 1.1.1.2.1 | **Cập nhật tờ khai thuế GTGT** | 1.25d | 2015-06-30 08:00 A | 2015-07-01 10:00 A |  | 100% |  |  |
| 10 |  | Tờ khai thuế GTGT (Tab 1) | 6h | 2015-06-30 08:00 A | 2015-06-30 15:00 A | 6 | 100% |  |  |
| 11 |  | Khai giải trình, bổ sung GTGT (Tab 2) | 4h | 2015-06-30 15:00 A | 2015-07-01 10:00 A | 10 | 100% |  |  |
| 12 |  | Danh sách tờ khai thuế GTGT | 4h | 2015-07-01 10:00 A | 2015-07-01 15:00 A | 11 | 100% |  |  |
| 13 |  | Báo cáo khai giải trình, bổ sung GTGT | 8h | 2015-07-01 15:00 A | 2015-07-02 15:00 A | 12 | 100% |  |  |
| 14 |  | Báo cáo tờ khai thuế GTGT | 8h | 2015-07-02 15:00 A | 2015-07-03 15:00 A | 13 | 100% |  |  |
| 15 | 1.1.1.3 | **Thuế tiêu thu đặc biệt** | 9.38d | 2015-07-03 15:00 A | 2015-07-17 09:00 A |  | 100% |  |  |
| 16 |  | Danh mục nhóm thuế TTDB | 2h | 2015-07-03 15:00 A | 2015-07-03 17:00 A | 14 | 100% |  |  |
| 17 |  | Danh sách bảng kê thuế TTDB bán ra | 4h | 2015-07-06 08:00 A | 2015-07-06 12:00 A | 16 | 100% |  |  |
| 18 |  | Cập nhật bảng kê thuế TTDB bán ra | 6h | 2015-07-06 13:00 A | 2015-07-07 10:00 A | 17 | 100% |  |  |
| 19 |  | Danh sách bảng kê thuế TTDB mua vào | 4h | 2015-07-07 10:00 A | 2015-07-07 15:00 A | 18 | 100% |  |  |
| 20 |  | Cập nhật bảng kê thuế TTDB mua vào | 6h | 2015-07-07 15:00 A | 2015-07-08 12:00 A | 19 | 100% |  |  |
| 21 |  | Danh sách tờ khai thuế TTDB | 4h | 2015-07-08 13:00 A | 2015-07-08 17:00 A | 20 | 100% |  |  |
| 22 |  | Cập nhật tờ khai thuế TTDB | 10h | 2015-07-13 16:00 A | 2015-07-15 09:00 A | 21, 130 | 100% |  |  |
| 23 |  | Báo cáo tờ khai thuế TTDB | 8h | 2015-07-15 09:00 A | 2015-07-16 09:00 A | 22 | 100% |  |  |
| 24 |  | Báo cáo khai giải trình, bổ sung TTDB | 8h | 2015-07-16 09:00 A | 2015-07-17 09:00 A | 23 | 100% |  |  |
| 25 | 1.1.1.4 | **Thuế bảo vệ môi trường** | 133.5d | 2015-07-17 09:00 A | 2016-01-20 14:00 |  | 46% | 3.75d |  |
| 26 |  | Danh mục vật tư | 2h | 2015-07-17 09:00 A | 2015-07-17 11:00 A | 24 | 100% |  |  |
| 27 |  | Danh mục nhóm thuế BVMT | 4h | 2015-07-17 11:00 A | 2015-07-17 16:00 A | 26 | 100% |  |  |
| 28 |  | Cập nhật hóa đơn mua vào kiêm phiếu nhập kho | 3h | 2015-07-17 16:00 | 2015-07-20 10:00 | 27 |  | 8.88d |  |
| 29 |  | Cập nhật hóa đơn mua hàng nhập khẩu | 3h | 2015-07-20 10:00 | 2015-07-20 14:00 | 28 |  | 8.88d |  |
| 30 |  | Cập nhật hóa đơn mua dịch vụ | 3h | 2015-07-20 14:00 | 2015-07-20 17:00 | 29 |  | 8.88d |  |
| 31 |  | Cập nhật hóa đơn bán hàng kiêm phiếu xuất kho | 3h | 2015-07-21 08:00 A | 2015-07-21 11:00 A | 30 | 100% |  |  |
| 32 |  | Cập nhật hóa đơn bán dịch vụ | 3h | 2015-07-21 11:00 A | 2015-07-21 15:00 A | 31 | 100% |  |  |
| 33 |  | Cập nhật hóa đơn hàng bán trả lại giảm giá | 3h | 2015-07-21 15:00 A | 2015-07-22 09:00 A | 32 | 100% |  |  |
| 34 |  | Cập nhật tờ khai thuế BVMT | 10h | 2015-07-22 09:00 A | 2015-07-23 11:00 A | 33 | 100% |  |  |
| 35 |  | Danh sách tờ khai thuế BVMT | 4h | 2015-07-23 11:00 | 2015-07-23 16:00 | 34 |  | 0.75d |  |
| 36 |  | Báo cáo tờ khai thuế BVMT | 8h | 2015-07-23 16:00 | 2015-07-24 16:00 | 35 |  | 0.75d |  |
| 37 |  | Báo cáo khai giải trình, bổ sung BVMT | 8h | 2016-01-19 14:00 | 2016-01-20 14:00 | 36, 141 |  | 3.75d |  |
| 38 | 1.1.1.5 | **Thuế thu nhập doanh nghiệp** | 4.75d | 2016-01-21 09:00 | 2016-01-27 16:00 |  |  | 3.75d |  |
| 39 | 1.1.1.5.1 | **Cập nhật tờ khai thuế TNDN** | 2.25d | 2016-01-21 09:00 | 2016-01-25 11:00 |  |  | 3.75d |  |
| 40 |  | Tờ khai thuế TNDN (Tab 1) | 6h | 2016-01-21 09:00 | 2016-01-21 16:00 | 7 |  | 4.38d |  |
| 41 |  | Kết quả kinh doanh theo báo cáo tài chính (Tab 2) | 4h | 2016-01-21 16:00 | 2016-01-22 11:00 | 40 |  | 4.38d |  |
| 42 |  | Kết chuyển lãi lỗ (Tab 3) | 4h | 2016-01-22 11:00 | 2016-01-22 16:00 | 41 |  | 4.38d |  |
| 43 |  | Khai giải trình, bổ sung TNDN (Tab 4) | 4h | 2016-01-22 16:00 | 2016-01-25 11:00 | 42 |  | 4.38d |  |
| 44 |  | Danh sách tờ khai thuế TNDN | 4h | 2016-01-25 11:00 | 2016-01-25 16:00 | 43 |  | 4.38d |  |
| 45 |  | Báo cáo tờ khai thuế TNDN | 8h | 2016-01-25 16:00 | 2016-01-26 16:00 | 44 |  | 4.38d |  |
| 46 |  | Báo cáo khai giải trình, bổ sung TNDN | 8h | 2016-01-26 16:00 | 2016-01-27 16:00 | 45, 130 |  | 4.38d |  |
| 47 | 1.1.1.6 | **Thuế thu nhập cá nhân** | 7.25d | 2016-02-11 15:00 | 2016-02-22 17:00 |  |  | 0d |  |
| 48 |  | Cập nhật tờ khai thuế TNCN-02/KK-TNCN | 8h | 2016-02-11 15:00 | 2016-02-12 15:00 | 46, 165 |  | 0d |  |
| 49 |  | Danh sách tờ khai thuế TNCN-02/KK-TNCN | 4h | 2016-02-12 15:00 | 2016-02-15 10:00 | 48 |  | 0d |  |
| 50 |  | Báo cáo tờ khai thuế TNCN-02/KK-TNCN | 8h | 2016-02-15 10:00 | 2016-02-16 10:00 | 49, 141 |  | 0d |  |
| 51 | 1.1.1.6.4 | **Cập nhật tờ khai quyết toán năm thuế TNCN-05/KK-TNCN** | 3.25d | 2016-02-16 10:00 | 2016-02-19 12:00 |  |  | 0d |  |
| 52 |  | Tờ khai quyết toán thuế TNCN (05KK-TNCN) | 8h | 2016-02-16 10:00 | 2016-02-17 10:00 | 50 |  | 0d |  |
| 53 |  | Bảng kê thu nhập chịu thuế và thu nhập cá nhân đối với thu nhập từ tiền lương.. Có ký hợp đồng lao động (05-1BK-TNCN) | 6h | 2016-02-17 10:00 | 2016-02-17 17:00 | 52 |  | 0d |  |
| 54 |  | Bảng kê thu nhập chịu thuế và thu nhập cá nhâận đã khấu trừ thu nhập từ tiến lương.. (05-2BK-TNCN) | 6h | 2016-02-18 08:00 | 2016-02-18 15:00 | 53, 155, 122 |  | 0d |  |
| 55 |  | Bảng kê thông tin người phụ thuộc giảm trừ gia cảnh (05-3BK-TNCN) | 6h | 2016-02-18 15:00 | 2016-02-19 12:00 | 54, 165 |  | 0d |  |
| 56 |  | Danh mục tờ khai quyết toán năm thuế TNCN-05/KK-TNCN | 4h | 2016-02-19 13:00 | 2016-02-19 17:00 | 55 |  | 0d |  |
| 57 |  | Báo cáo tờ khai quyết toán năm thuế TNCN-05/KK-TNCN | 8h | 2016-02-22 08:00 | 2016-02-22 17:00 | 56 |  | 0d |  |
| 58 | 1.1.2 | **Coding** | 177.75d | 2015-06-29 13:00 A | 2016-03-03 10:00 |  | 7% | 0d |  |
| 59 | 1.1.2.1 | **Danh mục chung** | 156.12d | 2015-06-29 13:00 A | 2016-02-02 14:00 |  | 67% | 0d |  |
| 60 |  | Danh mục gia hạn | 4h | 2015-06-29 13:00 A | 2015-06-29 17:00 A | 5 | 100% |  |  |
| 61 |  | Danh mục ngành nghể | 4h | 2015-06-30 08:00 A | 2015-06-30 12:00 A | 6, 60 | 100% |  |  |
| 62 |  | Danh mục ngành nghề có tỷ lệ thu nhập cao | 4h | 2016-02-02 09:00 | 2016-02-02 14:00 | 7, 94 |  | 0d |  |
| 63 | 1.1.2.2 | **Thuế thu giá trị gia tăng** | 18d | 2015-12-11 08:00 A | 2016-01-05 17:00 | 8 | 17% | 0d |  |
| 64 | 1.1.2.2.1 | **Cập nhật tờ khai thuế GTGT** | 10d | 2015-12-11 08:00 A | 2015-12-24 17:00 |  | 30% | 0d |  |
| 65 |  | Tờ khai thuế GTGT (Tab 1) | 40h | 2015-12-11 08:00 A | 2015-12-17 17:00 | 10, 61 | 60% | 0d | start no earlier than 2015-12-11 08:00 |
| 66 |  | Khai giải trình, bổ sung GTGT (Tab 2) | 40h | 2015-12-18 08:00 | 2015-12-24 17:00 | 11, 65 |  | 0d |  |
| 67 |  | Danh sách tờ khai thuế GTGT | 16h | 2015-12-25 08:00 | 2015-12-28 17:00 | 12, 66 |  | 0d |  |
| 68 |  | Báo cáo khai giải trình, bổ sung GTGT | 24h | 2015-12-29 08:00 | 2015-12-31 17:00 | 13, 67 |  | 0d |  |
| 69 |  | Báo cáo tờ khai thuế GTGT | 24h | 2016-01-01 08:00 | 2016-01-05 17:00 | 14, 68 |  | 0d |  |
| 70 |  | Release nội bộ thuế GTGT | 0h | 2016-01-05 17:00 | 2016-01-05 17:00 | 63 |  | 7.75d |  |

| ID | WBS | Task | Duration | Start | Finish | Predecessors | Complete | Total float | Constraint |
| --- | --- | --- | --- | --- | --- | --- | --- | --- | --- |
| 71 | 1.1.2.4 | **Thuế tiêu thu đặc biệt** | 24.38d | 2015-12-11 08:00 A | 2016-01-14 11:00 | 15 | 6% | 4.38d |  |
| 72 |  | Danh mục nhóm thuế TTDB | 5h | 2015-12-11 08:00 | 2015-12-11 14:00 |  |  | 0.25d | start no earlier than 2015-12-11 08:00 |
| 73 |  | Danh sách bảng kê thuế TTDB bán ra | 12h | 2015-12-11 14:00 | 2015-12-15 09:00 | 17, 72 |  | 0.25d |  |
| 74 |  | Cập nhật bảng kê thuế TTDB bán ra | 24h | 2015-12-15 09:00 | 2015-12-18 09:00 | 18, 73 |  | 0.25d |  |
| 75 |  | Danh sách bảng kê thuế TTDB mua vào | 12h | 2015-12-18 09:00 | 2015-12-21 14:00 | 19, 74 |  | 0.25d |  |
| 76 |  | Cập nhật bảng kê thuế TTDB mua vào | 24h | 2015-12-21 14:00 | 2015-12-24 14:00 | 20, 75 |  | 0.25d |  |
| 77 |  | Danh sách tờ khai thuế TTDB | 20h | 2015-12-24 14:00 A | 2015-12-29 09:00 | 21, 76 | 10% | 1.25d |  |
| 78 |  | Cập nhật tờ khai thuế TTDB | 50h | 2015-12-29 09:00 A | 2016-01-06 11:00 | 22, 77 | 20% | 4.38d |  |
| 79 |  | Báo cáo tờ khai thuế TTDB | 24h | 2016-01-06 11:00 | 2016-01-11 11:00 | 23, 78 |  | 4.38d |  |
| 80 |  | Báo cáo khai giải trình, bổ sung TTDB | 24h | 2016-01-11 11:00 | 2016-01-14 11:00 | 24, 79 |  | 4.38d |  |
| 81 |  | Release nội bộ thuế TTDB | 0h | 2016-01-14 11:00 | 2016-01-14 11:00 | 71 |  | 4.38d |  |
| 82 | 1.1.2.6 | **Thuế bảo vệ môi trường** | 19.12d | 2016-01-06 08:00 | 2016-02-02 09:00 |  |  | 0d |  |
| 83 |  | Danh mục vật tư | 4h | 2016-01-06 08:00 | 2016-01-06 12:00 | 26, 69 |  | 0d |  |
| 84 |  | Danh mục nhóm thuế BVMT | 8h | 2016-01-06 13:00 | 2016-01-07 12:00 | 27, 83 |  | 0d |  |
| 85 |  | Cập nhật hóa đơn mua vào kiêm phiếu nhập kho | 3h | 2016-01-07 13:00 | 2016-01-07 16:00 | 28, 84 |  | 0d |  |
| 86 |  | Cập nhật hóa đơn mua hàng nhập khẩu | 3h | 2016-01-07 16:00 | 2016-01-08 10:00 | 29, 85 |  | 0d |  |
| 87 |  | Cập nhật hóa đơn mua dịch vụ | 3h | 2016-01-08 10:00 | 2016-01-08 14:00 | 30, 86 |  | 0d |  |
| 88 |  | Cập nhật hóa đơn bán hàng kiêm phiếu xuất kho | 24h | 2016-01-08 14:00 | 2016-01-13 14:00 | 31, 87 |  | 0d |  |
| 89 |  | Cập nhật hóa đơn bán dịch vụ | 24h | 2016-01-13 14:00 | 2016-01-18 14:00 | 32, 88 |  | 0d |  |
| 90 |  | Cập nhật hóa đơn hàng bán trả lại giảm giá | 24h | 2016-01-18 14:00 | 2016-01-21 14:00 | 33, 89 |  | 0d |  |
| 91 |  | Cập nhật tờ khai thuế BVMT | 40h | 2016-01-21 14:00 | 2016-01-28 14:00 | 34, 90 |  | 0d |  |
| 92 |  | Danh sách tờ khai thuế BVMT | 4h | 2016-01-28 14:00 | 2016-01-29 09:00 | 35, 91 |  | 0d |  |
| 93 |  | Báo cáo tờ khai thuế BVMT | 8h | 2016-01-29 09:00 | 2016-02-01 09:00 | 36, 92 |  | 0d |  |
| 94 |  | Báo cáo khai giải trình, bổ sung BVMT | 8h | 2016-02-01 09:00 | 2016-02-02 09:00 | 37, 93 |  | 0d |  |
| 95 |  | Release nội bộ thuế BVMT | 0h | 2016-02-02 09:00 | 2016-02-02 09:00 | 82 |  | 2d |  |
| 96 | 1.1.2.8 | **Thuế thu nhập doanh nghiệp** | 4.75d | 2016-02-02 14:00 | 2016-02-09 11:00 | 38 |  | 0d |  |
| 97 | 1.1.2.8.1 | **Cập nhật tờ khai thuế TNDN** | 2.25d | 2016-02-02 14:00 | 2016-02-04 16:00 |  |  | 0d |  |
| 98 |  | Tờ khai thuế TNDN (Tab 1) | 6h | 2016-02-02 14:00 | 2016-02-03 11:00 | 40, 62 |  | 0d |  |
| 99 |  | Kết quả kinh doanh theo báo cáo tài chính (Tab 2) | 4h | 2016-02-03 11:00 | 2016-02-03 16:00 | 41, 98 |  | 0d |  |
| 100 |  | Kết chuyển lãi lỗ (Tab 3) | 4h | 2016-02-03 16:00 | 2016-02-04 11:00 | 42, 99 |  | 0d |  |
| 101 |  | Khai giải trình, bổ sung TNDN (Tab 4) | 4h | 2016-02-04 11:00 | 2016-02-04 16:00 | 43, 100 |  | 0d |  |
| 102 |  | Danh sách tờ khai thuế TNDN | 4h | 2016-02-04 16:00 | 2016-02-05 11:00 | 44, 101 |  | 0d |  |
| 103 |  | Báo cáo tờ khai thuế TNDN | 8h | 2016-02-05 11:00 | 2016-02-08 11:00 | 45, 102 |  | 0d |  |
| 104 |  | Báo cáo khai giải trình, bổ sung TNDN | 8h | 2016-02-08 11:00 | 2016-02-09 11:00 | 46, 103 |  | 0d |  |
| 105 |  | Release nội bộ thuế TNDN | 0h | 2016-02-09 11:00 | 2016-02-09 11:00 | 96 |  | 0d |  |
| 106 | 1.1.2.10 | **Thuế thu nhập cá nhân** | 7.25d | 2016-02-23 08:00 | 2016-03-03 10:00 | 47 |  | 0d |  |
| 107 |  | Cập nhật tờ khai thuế TNCN-02/KK-TNCN | 8h | 2016-02-23 08:00 | 2016-02-23 17:00 | 48, 104 |  | 0d |  |
| 108 |  | Danh sách tờ khai thuế TNCN-02/KK-TNCN | 4h | 2016-02-24 08:00 | 2016-02-24 12:00 | 49, 107 |  | 0d |  |
| 109 |  | Báo cáo tờ khai thuế TNCN-02/KK-TNCN | 8h | 2016-02-24 13:00 | 2016-02-25 12:00 | 50, 108 |  | 0d |  |
| 110 | 1.1.2.10.4 | **Cập nhật tờ khai quyết toán năm thuế TNCN-05/KK-TNCN** | 3.25d | 2016-02-25 13:00 | 2016-03-01 15:00 |  |  | 0d |  |
| 111 |  | Tờ khai quyết toán thuế TNCN (05KK-TNCN) | 8h | 2016-02-25 13:00 | 2016-02-26 12:00 | 52, 109 |  | 0d |  |
| 112 |  | Bảng kê thu nhập chịu thuế và thu nhập cá nhân đối với thu nhập từ tiền lương.. Có ký hợp đồng lao động (05-1BK-TNCN) | 6h | 2016-02-26 13:00 | 2016-02-29 10:00 | 53, 111 |  | 0d |  |
| 113 |  | Bảng kê thu nhập chịu thuế và thu nhập cá nhâận đã khấu trừ thu nhập từ tiến lương.. (05-2BK-TNCN) | 6h | 2016-02-29 10:00 | 2016-02-29 17:00 | 54, 112 |  | 0d |  |
| 114 |  | Bảng kê thông tin người phụ thuộc giảm trừ gia cảnh (05-3BK-TNCN) | 6h | 2016-03-01 08:00 | 2016-03-01 15:00 | 55, 113 |  | 0d |  |
| 115 |  | Danh mục tờ khai quyết toán năm thuế TNCN-05/KK-TNCN | 4h | 2016-03-01 15:00 | 2016-03-02 10:00 | 56, 114 |  | 0d |  |
| 116 |  | Báo cáo tờ khai quyết toán năm thuế TNCN-05/KK-TNCN | 8h | 2016-03-02 10:00 | 2016-03-03 10:00 | 57, 115 |  | 0d |  |
| 117 |  | Release nội bộ thuế TNCN | 0h | 2016-03-03 10:00 | 2016-03-03 10:00 | 106 |  | 0d |  |
| 118 | 1.1.3 | **Test** | 44.88d | 2016-01-06 08:00 | 2016-03-08 16:00 |  |  | 0d |  |
| 119 | 1.1.3.1 | **Danh mục chung** | 22.38d | 2016-01-06 08:00 | 2016-02-05 11:00 | 70 |  | 2d |  |
| 120 |  | Danh mục gia hạn | 2h | 2016-01-06 08:00 | 2016-01-06 10:00 | 21, 60 |  | 7.75d |  |
| 121 |  | Danh mục ngành nghể | 2h | 2016-01-06 10:00 | 2016-01-06 12:00 | 61, 120 |  | 7.75d |  |
| 122 |  | Danh mục ngành nghề có tỷ lệ thu nhập cao | 2h | 2016-02-05 09:00 | 2016-02-05 11:00 | 62, 154 |  | 2d |  |
| 123 | 1.1.3.2 | **Thuế thu giá trị gia tăng** | 1.88d | 2016-01-06 13:00 | 2016-01-08 11:00 |  |  | 7.75d |  |
| 124 | 1.1.3.2.1 | **Cập nhật tờ khai thuế GTGT** | 0.62d | 2016-01-06 13:00 | 2016-01-07 09:00 |  |  | 7.75d |  |
| 125 |  | Tờ khai thuế GTGT (Tab 1) | 3h | 2016-01-06 13:00 | 2016-01-06 16:00 | 65, 121 |  | 7.75d |  |
| 126 |  | Khai giải trình, bổ sung GTGT (Tab 2) | 2h | 2016-01-06 16:00 | 2016-01-07 09:00 | 66, 125 |  | 7.75d |  |
| 127 |  | Danh sách tờ khai thuế GTGT | 2h | 2016-01-07 09:00 | 2016-01-07 11:00 | 67, 126 |  | 7.75d |  |
| 128 |  | Báo cáo khai giải trình, bổ sung GTGT | 4h | 2016-01-07 11:00 | 2016-01-07 16:00 | 68, 127 |  | 7.75d |  |
| 129 |  | Báo cáo tờ khai thuế GTGT | 4h | 2016-01-07 16:00 | 2016-01-08 11:00 | 69, 128 |  | 7.75d |  |
| 130 |  | Release thuế GTGT | 0h | 2016-01-08 11:00 | 2016-01-08 11:00 | 123 |  | 16.88d |  |
| 131 | 1.1.3.4 | **Thuế tiêu thu đặc biệt** | 3.25d | 2016-01-14 11:00 | 2016-01-19 14:00 | 81 |  | 3.75d |  |
| 132 |  | Danh mục nhóm thuế TTDB | 1h | 2016-01-14 11:00 | 2016-01-14 12:00 | 36, 72, 129 |  | 3.75d |  |
| 133 |  | Danh sách bảng kê thuế TTDB bán ra | 2h | 2016-01-14 13:00 | 2016-01-14 15:00 | 73, 132 |  | 3.75d |  |
| 134 |  | Cập nhật bảng kê thuế TTDB bán ra | 3h | 2016-01-14 15:00 | 2016-01-15 09:00 | 74, 133 |  | 3.75d |  |
| 135 |  | Danh sách bảng kê thuế TTDB mua vào | 2h | 2016-01-15 09:00 | 2016-01-15 11:00 | 75, 134 |  | 3.75d |  |
| 136 |  | Cập nhật bảng kê thuế TTDB mua vào | 3h | 2016-01-15 11:00 | 2016-01-15 15:00 | 76, 135 |  | 3.75d |  |
| 137 |  | Danh sách tờ khai thuế TTDB | 2h | 2016-01-15 15:00 | 2016-01-15 17:00 | 77, 136 |  | 3.75d |  |
| 138 |  | Cập nhật tờ khai thuế TTDB | 5h | 2016-01-18 08:00 | 2016-01-18 14:00 | 78, 137 |  | 3.75d |  |
| 139 |  | Báo cáo tờ khai thuế TTDB | 4h | 2016-01-18 14:00 | 2016-01-19 09:00 | 79, 138 |  | 3.75d |  |
| 140 |  | Báo cáo khai giải trình, bổ sung TTDB | 4h | 2016-01-19 09:00 | 2016-01-19 14:00 | 80, 139 |  | 3.75d |  |

| ID | WBS | Task | Duration | Start | Finish | Predecessors | Total float |
| --- | --- | --- | --- | --- | --- | --- | --- |
| 141 |  | Release thuế TTDB | 0h | 2016-01-19 14:00 | 2016-01-19 14:00 | 131 | 4.38d |
| 142 | 1.1.3.6 | **Thuế bảo vệ môi trường** | 3d | 2016-02-02 09:00 | 2016-02-05 09:00 | 95 | 2d |
| 143 |  | Danh mục vật tư | 1h | 2016-02-02 09:00 | 2016-02-02 10:00 | 46, 83, 140 | 2d |
| 144 |  | Danh mục nhóm thuế BVMT | 2h | 2016-02-02 10:00 | 2016-02-02 12:00 | 84, 143 | 2d |
| 145 |  | Cập nhật hóa đơn mua vào kiêm phiếu nhập kho | 1h | 2016-02-02 13:00 | 2016-02-02 14:00 | 85, 144 | 2d |
| 146 |  | Cập nhật hóa đơn mua hàng nhập khẩu | 1h | 2016-02-02 14:00 | 2016-02-02 15:00 | 86, 145 | 2d |
| 147 |  | Cập nhật hóa đơn mua dịch vụ | 1h | 2016-02-02 15:00 | 2016-02-02 16:00 | 87, 146 | 2d |
| 148 |  | Cập nhật hóa đơn bán hàng kiêm phiếu xuất kho | 1h | 2016-02-02 16:00 | 2016-02-02 17:00 | 88, 147 | 2d |
| 149 |  | Cập nhật hóa đơn bán dịch vụ | 1h | 2016-02-03 08:00 | 2016-02-03 09:00 | 89, 148 | 2d |
| 150 |  | Cập nhật hóa đơn hàng bán trả lại giảm giá | 1h | 2016-02-03 09:00 | 2016-02-03 10:00 | 90, 149 | 2d |
| 151 |  | Cập nhật tờ khai thuế BVMT | 5h | 2016-02-03 10:00 | 2016-02-03 16:00 | 91, 150 | 2d |
| 152 |  | Danh sách tờ khai thuế BVMT | 2h | 2016-02-03 16:00 | 2016-02-04 09:00 | 92, 151 | 2d |
| 153 |  | Báo cáo tờ khai thuế BVMT | 4h | 2016-02-04 09:00 | 2016-02-04 14:00 | 93, 152 | 2d |
| 154 |  | Báo cáo khai giải trình, bổ sung BVMT | 4h | 2016-02-04 14:00 | 2016-02-05 09:00 | 94, 153 | 2d |
| 155 |  | Release thuế BVMT | 0h | 2016-02-05 09:00 | 2016-02-05 09:00 | 142 | 2.25d |
| 156 | 1.1.3.8 | **Thuế thu nhập doanh nghiệp** | 2.38d | 2016-02-09 11:00 | 2016-02-11 15:00 | 105 | 0d |
| 157 | 1.1.3.8.1 | **Cập nhật tờ khai thuế TNDN** | 1.12d | 2016-02-09 11:00 | 2016-02-10 12:00 |  | 0d |
| 158 |  | Tờ khai thuế TNDN (Tab 1) | 3h | 2016-02-09 11:00 | 2016-02-09 15:00 | 98, 122, 155 | 0d |
| 159 |  | Kết quả kinh doanh theo báo cáo tài chính (Tab 2) | 2h | 2016-02-09 15:00 | 2016-02-09 17:00 | 99, 158 | 0d |
| 160 |  | Kết chuyển lãi lỗ (Tab 3) | 2h | 2016-02-10 08:00 | 2016-02-10 10:00 | 100, 159 | 0d |
| 161 |  | Khai giải trình, bổ sung TNDN (Tab 4) | 2h | 2016-02-10 10:00 | 2016-02-10 12:00 | 101, 160 | 0d |
| 162 |  | Danh sách tờ khai thuế TNDN | 2h | 2016-02-10 13:00 | 2016-02-10 15:00 | 102, 161 | 0d |
| 163 |  | Báo cáo tờ khai thuế TNDN | 4h | 2016-02-10 15:00 | 2016-02-11 10:00 | 103, 162 | 0d |
| 164 |  | Báo cáo khai giải trình, bổ sung TNDN | 4h | 2016-02-11 10:00 | 2016-02-11 15:00 | 104, 163 | 0d |
| 165 |  | Release thuế TNDN | 0h | 2016-02-11 15:00 | 2016-02-11 15:00 | 156 | 0d |
| 166 | 1.1.3.10 | **Thuế thu nhập cá nhân** | 3.62d | 2016-03-03 10:00 | 2016-03-08 16:00 | 117 | 0d |
| 167 |  | Cập nhật tờ khai thuế TNCN-02/KK-TNCN | 4h | 2016-03-03 10:00 | 2016-03-03 15:00 | 107, 164 | 0d |
| 168 |  | Danh sách tờ khai thuế TNCN-02/KK-TNCN | 2h | 2016-03-03 15:00 | 2016-03-03 17:00 | 108, 167 | 0d |
| 169 |  | Báo cáo tờ khai thuế TNCN-02/KK-TNCN | 4h | 2016-03-04 08:00 | 2016-03-04 12:00 | 109, 168 | 0d |
| 170 | 1.1.3.10.4 | **Cập nhật tờ khai quyết toán năm thuế TNCN-05/KK-TNCN** | 1.62d | 2016-03-04 13:00 | 2016-03-08 09:00 |  | 0d |
| 171 |  | Tờ khai quyết toán thuế TNCN (05KK-TNCN) | 4h | 2016-03-04 13:00 | 2016-03-04 17:00 | 111, 169 | 0d |
| 172 |  | Bảng kê thu nhập chịu thuế và thu nhập cá nhân đối với thu nhập từ tiền lương.. Có ký hợp đồng lao động (05-1BK-TNCN) | 3h | 2016-03-07 08:00 | 2016-03-07 11:00 | 112, 171 | 0d |
| 173 |  | Bảng kê thu nhập chịu thuế và thu nhập cá nhâận đã khấu trừ thu nhập từ tiến lương.. (05-2BK-TNCN) | 3h | 2016-03-07 11:00 | 2016-03-07 15:00 | 113, 172 | 0d |
| 174 |  | Bảng kê thông tin người phụ thuộc giảm trừ gia cảnh (05-3BK-TNCN) | 3h | 2016-03-07 15:00 | 2016-03-08 09:00 | 114, 173 | 0d |
| 175 |  | Danh mục tờ khai quyết toán năm thuế TNCN-05/KK-TNCN | 2h | 2016-03-08 09:00 | 2016-03-08 11:00 | 115, 174 | 0d |
| 176 |  | Báo cáo tờ khai quyết toán năm thuế TNCN-05/KK-TNCN | 4h | 2016-03-08 11:00 | 2016-03-08 16:00 | 116, 175 | 0d |
| 177 |  | Release thuế TNCN | 0h | 2016-03-08 16:00 | 2016-03-08 16:00 | 166 | 0d |
| 178 |  | Hoàn thành báo cáo thuế | 0h | 2016-03-08 16:00 | 2016-03-08 16:00 | 2 | 0d |

## Version 2 (data date 2015-05-08, saved 2015-12-16)

Note of the change: Huyền, cập nhật tiến độ

Last finish stays 2016-03-08. Complete tasks 24 → 25.

Changed:

| ID | Task | Start | Finish | Complete | Total float |
| --- | --- | --- | --- | --- | --- |
| 1 | **ACC 2015** |  |  | 17% → 18% |  |
| 2 | **Báo cáo thuế** |  |  | 17% → 18% |  |
| 58 | **Coding** |  |  | 7% → 10% |  |
| 71 | **Thuế tiêu thu đặc biệt** |  |  | 6% → 14% |  |
| 72 | Danh mục nhóm thuế TTDB | 2015-12-11 08:00 A | 2015-12-11 14:00 A | 0% → 100% | 0.25d → none |
| 73 | Danh sách bảng kê thuế TTDB bán ra | 2015-12-11 14:00 A |  | 0% → 40% | 0.25d → 0.6d |
| 74 | Cập nhật bảng kê thuế TTDB bán ra | 2015-12-15 09:00 A |  | 0% → 20% |  |

## Version 3 (data date 2015-05-08, saved 2015-12-17)

Note of the change: Huyền, cập nhật tiến độ thực hiện

Last finish stays 2016-03-08.

Changed:

| ID | Task | Complete |
| --- | --- | --- |
| 1 | **ACC 2015** | 18% → 19% |
| 2 | **Báo cáo thuế** | 18% → 19% |
| 58 | **Coding** | 10% → 12% |
| 63 | **Thuế thu giá trị gia tăng** | 17% → 22% |
| 64 | **Cập nhật tờ khai thuế GTGT** | 30% → 40% |
| 65 | Tờ khai thuế GTGT (Tab 1) | 60% → 80% |
| 71 | **Thuế tiêu thu đặc biệt** | 14% → 16% |
| 74 | Cập nhật bảng kê thuế TTDB bán ra | 20% → 40% |

## Version 4 (data date 2015-05-08, saved 2015-12-18)

Note of the change: Cập nhật tiến độ thực hiện

Last finish stays 2016-03-08. Complete tasks 25 → 26.

Changed:

| ID | Task | Finish | Complete | Total float |
| --- | --- | --- | --- | --- |
| 1 | **ACC 2015** |  | 19% → 21% |  |
| 2 | **Báo cáo thuế** |  | 19% → 21% |  |
| 58 | **Coding** |  | 12% → 14% |  |
| 63 | **Thuế thu giá trị gia tăng** |  | 22% → 28% |  |
| 64 | **Cập nhật tờ khai thuế GTGT** |  | 40% → 50% |  |
| 65 | Tờ khai thuế GTGT (Tab 1) | 2015-12-17 17:00 A | 80% → 100% | 0d → none |
| 71 | **Thuế tiêu thu đặc biệt** |  | 16% → 18% |  |
| 74 | Cập nhật bảng kê thuế TTDB bán ra |  | 40% → 55% |  |

## Version 5 (data date 2015-05-08, saved 2015-12-21)

Note of the change: cập nhật tiến độ

Last finish stays 2016-03-08.

Changed:

| ID | Task | Start | Complete | Total float |
| --- | --- | --- | --- | --- |
| 1 | **ACC 2015** |  | 21% → 23% |  |
| 2 | **Báo cáo thuế** |  | 21% → 23% |  |
| 58 | **Coding** |  | 14% → 18% |  |
| 63 | **Thuế thu giá trị gia tăng** |  | 28% → 39% |  |
| 64 | **Cập nhật tờ khai thuế GTGT** |  | 50% → 70% |  |
| 66 | Khai giải trình, bổ sung GTGT (Tab 2) | 2015-12-18 08:00 A | 0% → 40% |  |
| 71 | **Thuế tiêu thu đặc biệt** |  | 18% → 23% |  |
| 73 | Danh sách bảng kê thuế TTDB bán ra |  | 40% → 60% | 0.6d → 2.7d |
| 74 | Cập nhật bảng kê thuế TTDB bán ra |  | 55% → 90% |  |

## Version 6 (data date 2015-05-08, saved 2015-12-22)

Note of the change: Tiến độ thực hiện

Last finish stays 2016-03-08. Complete tasks 26 → 27.

Changed:

| ID | Task | Finish | Complete | Total float |
| --- | --- | --- | --- | --- |
| 1 | **ACC 2015** |  | 23% → 26% |  |
| 2 | **Báo cáo thuế** |  | 23% → 26% |  |
| 58 | **Coding** |  | 18% → 23% |  |
| 63 | **Thuế thu giá trị gia tăng** |  | 39% → 56% |  |
| 64 | **Cập nhật tờ khai thuế GTGT** | 2015-12-24 17:00 A | 70% → 100% | 0d → none |
| 66 | Khai giải trình, bổ sung GTGT (Tab 2) | 2015-12-24 17:00 A | 40% → 100% | 0d → none |
| 71 | **Thuế tiêu thu đặc biệt** |  | 23% → 25% |  |
| 73 | Danh sách bảng kê thuế TTDB bán ra |  | 60% → 80% | 2.7d → 2.85d |
| 74 | Cập nhật bảng kê thuế TTDB bán ra |  | 90% → 95% |  |

## Version 7 (data date 2015-05-08, saved 2015-12-24)

Last finish stays 2016-03-08.

Changed:

| ID | Task | Start | Complete |
| --- | --- | --- | --- |
| 1 | **ACC 2015** |  | 26% → 27% |
| 2 | **Báo cáo thuế** |  | 26% → 27% |
| 58 | **Coding** |  | 23% → 25% |
| 63 | **Thuế thu giá trị gia tăng** |  | 56% → 64% |
| 67 | Danh sách tờ khai thuế GTGT | 2015-12-25 08:00 A | 0% → 75% |

## Version 8 (data date 2015-05-08, saved 2015-12-25)

Note of the change: Tiến độ thực hiện

Last finish stays 2016-03-08. Complete tasks 27 → 30.

Changed:

| ID | Task | Finish | Complete | Total float |
| --- | --- | --- | --- | --- |
| 1 | **ACC 2015** |  | 27% → 28% |  |
| 2 | **Báo cáo thuế** |  | 27% → 28% |  |
| 58 | **Coding** |  | 25% → 26% |  |
| 63 | **Thuế thu giá trị gia tăng** |  | 64% → 67% |  |
| 67 | Danh sách tờ khai thuế GTGT | 2015-12-28 17:00 A | 75% → 100% | 0d → none |
| 71 | **Thuế tiêu thu đặc biệt** |  | 25% → 27% |  |
| 73 | Danh sách bảng kê thuế TTDB bán ra | 2015-12-15 09:00 A | 80% → 100% | 2.85d → none |
| 74 | Cập nhật bảng kê thuế TTDB bán ra | 2015-12-18 09:00 A | 95% → 100% | 0.25d → none |

## Version 9 (data date 2015-05-08, saved 2015-12-28)

Note of the change: Update schedule: Replace resource

Last finish 2016-03-08 → 2016-04-05 (+28d).

Changed:

| ID | Task | Start | Finish | Duration | Complete | Total float | Predecessors | Other |
| --- | --- | --- | --- | --- | --- | --- | --- | --- |
| 1 | **ACC 2015** |  | 2016-03-08 16:00 → 2016-04-05 10:00 (+28d) | 181.88d → 194.25d | 28% → 30% |  |  |  |
| 2 | **Báo cáo thuế** |  | 2016-03-08 16:00 → 2016-04-05 10:00 (+28d) | 181.88d → 194.25d | 28% → 30% |  |  |  |
| 3 | **Analyze** |  | 2016-02-22 17:00 → 2016-03-21 11:00 (+28d) | 171d → 183.38d |  |  |  |  |
| 4 | **Danh mục chung** |  | 2016-01-21 09:00 → 2016-02-03 09:00 (+13d) | 148.12d → 156.12d |  | 3.75d → 8.12d |  |  |
| 7 | Danh mục ngành nghề có tỷ lệ thu nhập cao | 2016-01-20 14:00 → 2016-02-02 14:00 (+13d) | 2016-01-21 09:00 → 2016-02-03 09:00 (+13d) |  |  | 3.75d → 8.12d |  |  |
| 25 | **Thuế bảo vệ môi trường** |  | 2016-01-20 14:00 → 2016-02-02 14:00 (+13d) | 133.5d → 141.5d |  | 3.75d → 8.12d |  |  |
| 37 | Báo cáo khai giải trình, bổ sung BVMT | 2016-01-19 14:00 → 2016-02-01 14:00 (+13d) | 2016-01-20 14:00 → 2016-02-02 14:00 (+13d) |  |  | 3.75d → 8.12d |  |  |
| 38 | **Thuế thu nhập doanh nghiệp** | 2016-01-21 09:00 → 2016-02-03 09:00 (+13d) | 2016-01-27 16:00 → 2016-02-17 16:00 (+21d) |  |  | 3.75d → 8.12d |  |  |
| 39 | **Cập nhật tờ khai thuế TNDN** | 2016-01-21 09:00 → 2016-02-03 09:00 (+13d) | 2016-01-25 11:00 → 2016-02-15 11:00 (+21d) |  |  | 3.75d → 8.12d |  |  |
| 40 | Tờ khai thuế TNDN (Tab 1) | 2016-01-21 09:00 → 2016-02-03 09:00 (+13d) | 2016-01-21 16:00 → 2016-02-03 16:00 (+13d) |  |  | 4.38d → 8.12d |  |  |
| 41 | Kết quả kinh doanh theo báo cáo tài chính (Tab 2) | 2016-01-21 16:00 → 2016-02-03 16:00 (+13d) | 2016-01-22 11:00 → 2016-02-04 11:00 (+13d) |  |  | 4.38d → 8.12d |  |  |
| 42 | Kết chuyển lãi lỗ (Tab 3) | 2016-01-22 11:00 → 2016-02-04 11:00 (+13d) | 2016-01-22 16:00 → 2016-02-04 16:00 (+13d) |  |  | 4.38d → 8.12d |  |  |
| 43 | Khai giải trình, bổ sung TNDN (Tab 4) | 2016-01-22 16:00 → 2016-02-04 16:00 (+13d) | 2016-01-25 11:00 → 2016-02-15 11:00 (+21d) |  |  | 4.38d → 8.12d |  |  |
| 44 | Danh sách tờ khai thuế TNDN | 2016-01-25 11:00 → 2016-02-15 11:00 (+21d) | 2016-01-25 16:00 → 2016-02-15 16:00 (+21d) |  |  | 4.38d → 8.12d |  |  |
| 45 | Báo cáo tờ khai thuế TNDN | 2016-01-25 16:00 → 2016-02-15 16:00 (+21d) | 2016-01-26 16:00 → 2016-02-16 16:00 (+21d) |  |  | 4.38d → 8.12d |  |  |
| 46 | Báo cáo khai giải trình, bổ sung TNDN | 2016-01-26 16:00 → 2016-02-16 16:00 (+21d) | 2016-01-27 16:00 → 2016-02-17 16:00 (+21d) |  |  | 4.38d → 8.12d |  |  |
| 47 | **Thuế thu nhập cá nhân** | 2016-02-11 15:00 → 2016-03-10 09:00 (+28d) | 2016-02-22 17:00 → 2016-03-21 11:00 (+28d) |  |  |  |  |  |
| 48 | Cập nhật tờ khai thuế TNCN-02/KK-TNCN | 2016-02-11 15:00 → 2016-03-10 09:00 (+28d) | 2016-02-12 15:00 → 2016-03-11 09:00 (+28d) |  |  |  |  |  |
| 49 | Danh sách tờ khai thuế TNCN-02/KK-TNCN | 2016-02-12 15:00 → 2016-03-11 09:00 (+28d) | 2016-02-15 10:00 → 2016-03-11 14:00 (+25d) |  |  |  |  |  |
| 50 | Báo cáo tờ khai thuế TNCN-02/KK-TNCN | 2016-02-15 10:00 → 2016-03-11 14:00 (+25d) | 2016-02-16 10:00 → 2016-03-14 14:00 (+27d) |  |  |  |  |  |
| 51 | **Cập nhật tờ khai quyết toán năm thuế TNCN-05/KK-TNCN** | 2016-02-16 10:00 → 2016-03-14 14:00 (+27d) | 2016-02-19 12:00 → 2016-03-17 16:00 (+27d) |  |  |  |  |  |
| 52 | Tờ khai quyết toán thuế TNCN (05KK-TNCN) | 2016-02-16 10:00 → 2016-03-14 14:00 (+27d) | 2016-02-17 10:00 → 2016-03-15 14:00 (+27d) |  |  |  |  |  |
| 53 | Bảng kê thu nhập chịu thuế và thu nhập cá nhân đối với thu nhập từ tiền lương.. Có ký hợp đồng lao động (05-1BK-TNCN) | 2016-02-17 10:00 → 2016-03-15 14:00 (+27d) | 2016-02-17 17:00 → 2016-03-16 11:00 (+28d) |  |  |  |  |  |
| 54 | Bảng kê thu nhập chịu thuế và thu nhập cá nhâận đã khấu trừ thu nhập từ tiến lương.. (05-2BK-TNCN) | 2016-02-18 08:00 → 2016-03-16 11:00 (+27d) | 2016-02-18 15:00 → 2016-03-17 09:00 (+28d) |  |  |  |  |  |
| 55 | Bảng kê thông tin người phụ thuộc giảm trừ gia cảnh (05-3BK-TNCN) | 2016-02-18 15:00 → 2016-03-17 09:00 (+28d) | 2016-02-19 12:00 → 2016-03-17 16:00 (+27d) |  |  |  |  |  |
| 56 | Danh mục tờ khai quyết toán năm thuế TNCN-05/KK-TNCN | 2016-02-19 13:00 → 2016-03-17 16:00 (+27d) | 2016-02-19 17:00 → 2016-03-18 11:00 (+28d) |  |  |  |  |  |
| 57 | Báo cáo tờ khai quyết toán năm thuế TNCN-05/KK-TNCN | 2016-02-22 08:00 → 2016-03-18 11:00 (+25d) | 2016-02-22 17:00 → 2016-03-21 11:00 (+28d) |  |  |  |  |  |
| 58 | **Coding** |  | 2016-03-03 10:00 → 2016-03-30 14:00 (+27d) | 177.75d → 190.12d | 26% → 29% |  |  |  |
| 59 | **Danh mục chung** |  | 2016-02-02 14:00 → 2016-02-29 17:00 (+27d) | 156.12d → 168.5d |  |  |  |  |
| 62 | Danh mục ngành nghề có tỷ lệ thu nhập cao | 2016-02-02 09:00 → 2016-02-29 13:00 (+27d) | 2016-02-02 14:00 → 2016-02-29 17:00 (+27d) |  |  |  |  |  |
| 63 | **Thuế thu giá trị gia tăng** |  | 2016-01-05 17:00 → 2015-12-28 17:00 A (-8d) | 18d → 12d | 67% → 100% | 0d → none |  |  |
| 68 | Release nội bộ thuế GTGT | 2016-01-05 17:00 → 2015-12-28 17:00 (-8d) | 2016-01-05 17:00 → 2015-12-28 17:00 (-8d) |  |  | 7.75d → 35.62d |  |  |
| 69 | **Thuế tiêu thu đặc biệt** |  | 2016-01-14 11:00 → 2016-01-25 11:00 (+11d) | 24.38d → 30.38d | 27% → 29% | 4.38d → 0d |  |  |
| 73 | Danh sách bảng kê thuế TTDB mua vào | 2015-12-18 09:00 A |  |  | 0% → 50% | 0.25d → 1.5d |  |  |
| 74 | Cập nhật bảng kê thuế TTDB mua vào | 2015-12-21 14:00 A |  |  | 0% → 50% |  |  |  |
| 76 | Cập nhật tờ khai thuế TTDB |  | 2016-01-06 11:00 → 2016-01-07 11:00 (+1d) |  |  | 4.38d → 0d |  |  |
| 77 | Báo cáo tờ khai thuế TTDB | 2016-01-06 11:00 → 2016-01-07 11:00 (+1d) | 2016-01-11 11:00 → 2016-01-12 11:00 (+1d) |  |  | 4.38d → 0d |  |  |
| 78 | Báo cáo khai giải trình, bổ sung TTDB | 2016-01-11 11:00 → 2016-01-12 11:00 (+1d) | 2016-01-14 11:00 → 2016-01-15 11:00 (+1d) |  |  | 4.38d → 0d |  |  |
| 79 | Báo cáo khai giải trình, bổ sung GTGT | 2015-12-29 08:00 → 2016-01-15 11:00 (+17d) | 2015-12-31 17:00 → 2016-01-20 11:00 (+20d) |  |  |  | 13, 67 → 13, 78 | resources Chiến Thắng → Lệ Huyền |
| 80 | Báo cáo tờ khai thuế GTGT | 2016-01-01 08:00 → 2016-01-20 11:00 (+19d) | 2016-01-05 17:00 → 2016-01-25 11:00 (+20d) |  |  |  | 14, 79 → 79 | resources Chiến Thắng → Lệ Huyền |
| 81 | Release nội bộ thuế TTDB | 2016-01-14 11:00 → 2016-01-25 11:00 (+11d) | 2016-01-14 11:00 → 2016-01-25 11:00 (+11d) |  |  | 4.38d → 9.12d |  |  |
| 82 | **Thuế bảo vệ môi trường** | 2016-01-06 08:00 → 2016-01-25 11:00 (+19d) | 2016-02-02 09:00 → 2016-02-29 12:00 (+27d) |  |  |  |  |  |
| 83 | Danh mục vật tư | 2016-01-06 08:00 → 2016-01-25 11:00 (+19d) | 2016-01-06 12:00 → 2016-01-25 16:00 (+19d) |  |  |  |  | resources Chiến Thắng → Lệ Huyền |
| 84 | Danh mục nhóm thuế BVMT | 2016-01-06 13:00 → 2016-01-25 16:00 (+19d) | 2016-01-07 12:00 → 2016-01-26 16:00 (+19d) |  |  |  |  | resources Chiến Thắng → Lệ Huyền |
| 85 | Cập nhật hóa đơn mua vào kiêm phiếu nhập kho | 2016-01-07 13:00 → 2016-01-26 16:00 (+19d) | 2016-01-07 16:00 → 2016-01-27 10:00 (+20d) |  |  |  |  | resources Chiến Thắng → Lệ Huyền |
| 86 | Cập nhật hóa đơn mua hàng nhập khẩu | 2016-01-07 16:00 → 2016-01-27 10:00 (+20d) | 2016-01-08 10:00 → 2016-01-27 14:00 (+19d) |  |  |  |  | resources Chiến Thắng → Lệ Huyền |
| 87 | Cập nhật hóa đơn mua dịch vụ | 2016-01-08 10:00 → 2016-01-27 14:00 (+19d) | 2016-01-08 14:00 → 2016-01-27 17:00 (+19d) |  |  |  |  | resources Chiến Thắng → Lệ Huyền |
| 88 | Cập nhật hóa đơn bán hàng kiêm phiếu xuất kho | 2016-01-08 14:00 → 2016-01-28 08:00 (+20d) | 2016-01-13 14:00 → 2016-02-01 17:00 (+19d) |  |  |  |  | resources Chiến Thắng → Lệ Huyền |
| 89 | Cập nhật hóa đơn bán dịch vụ | 2016-01-13 14:00 → 2016-02-02 08:00 (+20d) | 2016-01-18 14:00 → 2016-02-04 17:00 (+17d) |  |  |  |  | resources Chiến Thắng → Lệ Huyền |
| 90 | Cập nhật hóa đơn hàng bán trả lại giảm giá | 2016-01-18 14:00 → 2016-02-15 08:00 (+28d) | 2016-01-21 14:00 → 2016-02-17 17:00 (+27d) |  |  |  |  | resources Chiến Thắng → Lệ Huyền |
| 91 | Cập nhật tờ khai thuế BVMT | 2016-01-21 14:00 → 2016-02-18 08:00 (+28d) | 2016-01-28 14:00 → 2016-02-24 17:00 (+27d) |  |  |  |  | resources Chiến Thắng → Lệ Huyền |
| 92 | Danh sách tờ khai thuế BVMT | 2016-01-28 14:00 → 2016-02-25 08:00 (+28d) | 2016-01-29 09:00 → 2016-02-25 12:00 (+27d) |  |  |  |  | resources Chiến Thắng → Lệ Huyền |
| 93 | Báo cáo tờ khai thuế BVMT | 2016-01-29 09:00 → 2016-02-25 13:00 (+27d) | 2016-02-01 09:00 → 2016-02-26 12:00 (+25d) |  |  |  |  | resources Chiến Thắng → Lệ Huyền |
| 94 | Báo cáo khai giải trình, bổ sung BVMT | 2016-02-01 09:00 → 2016-02-26 13:00 (+25d) | 2016-02-02 09:00 → 2016-02-29 12:00 (+27d) |  |  |  |  | resources Chiến Thắng → Lệ Huyền |
| 95 | Release nội bộ thuế BVMT | 2016-02-02 09:00 → 2016-02-29 12:00 (+27d) | 2016-02-02 09:00 → 2016-02-29 12:00 (+27d) |  |  |  |  |  |
| 96 | **Thuế thu nhập doanh nghiệp** | 2016-02-02 14:00 → 2016-03-01 08:00 (+28d) | 2016-02-09 11:00 → 2016-03-07 15:00 (+27d) |  |  |  |  |  |
| 97 | **Cập nhật tờ khai thuế TNDN** | 2016-02-02 14:00 → 2016-03-01 08:00 (+28d) | 2016-02-04 16:00 → 2016-03-03 10:00 (+28d) |  |  |  |  |  |
| 98 | Tờ khai thuế TNDN (Tab 1) | 2016-02-02 14:00 → 2016-03-01 08:00 (+28d) | 2016-02-03 11:00 → 2016-03-01 15:00 (+27d) |  |  |  |  |  |
| 99 | Kết quả kinh doanh theo báo cáo tài chính (Tab 2) | 2016-02-03 11:00 → 2016-03-01 15:00 (+27d) | 2016-02-03 16:00 → 2016-03-02 10:00 (+28d) |  |  |  |  |  |
| 100 | Kết chuyển lãi lỗ (Tab 3) | 2016-02-03 16:00 → 2016-03-02 10:00 (+28d) | 2016-02-04 11:00 → 2016-03-02 15:00 (+27d) |  |  |  |  |  |
| 101 | Khai giải trình, bổ sung TNDN (Tab 4) | 2016-02-04 11:00 → 2016-03-02 15:00 (+27d) | 2016-02-04 16:00 → 2016-03-03 10:00 (+28d) |  |  |  |  |  |
| 102 | Danh sách tờ khai thuế TNDN | 2016-02-04 16:00 → 2016-03-03 10:00 (+28d) | 2016-02-05 11:00 → 2016-03-03 15:00 (+27d) |  |  |  |  |  |
| 103 | Báo cáo tờ khai thuế TNDN | 2016-02-05 11:00 → 2016-03-03 15:00 (+27d) | 2016-02-08 11:00 → 2016-03-04 15:00 (+25d) |  |  |  |  |  |
| 104 | Báo cáo khai giải trình, bổ sung TNDN | 2016-02-08 11:00 → 2016-03-04 15:00 (+25d) | 2016-02-09 11:00 → 2016-03-07 15:00 (+27d) |  |  |  |  |  |
| 105 | Release nội bộ thuế TNDN | 2016-02-09 11:00 → 2016-03-07 15:00 (+27d) | 2016-02-09 11:00 → 2016-03-07 15:00 (+27d) |  |  |  |  |  |
| 106 | **Thuế thu nhập cá nhân** | 2016-02-23 08:00 → 2016-03-21 11:00 (+27d) | 2016-03-03 10:00 → 2016-03-30 14:00 (+27d) |  |  |  |  |  |
| 107 | Cập nhật tờ khai thuế TNCN-02/KK-TNCN | 2016-02-23 08:00 → 2016-03-21 11:00 (+27d) | 2016-02-23 17:00 → 2016-03-22 11:00 (+28d) |  |  |  |  |  |
| 108 | Danh sách tờ khai thuế TNCN-02/KK-TNCN | 2016-02-24 08:00 → 2016-03-22 11:00 (+27d) | 2016-02-24 12:00 → 2016-03-22 16:00 (+27d) |  |  |  |  |  |
| 109 | Báo cáo tờ khai thuế TNCN-02/KK-TNCN | 2016-02-24 13:00 → 2016-03-22 16:00 (+27d) | 2016-02-25 12:00 → 2016-03-23 16:00 (+27d) |  |  |  |  |  |
| 110 | **Cập nhật tờ khai quyết toán năm thuế TNCN-05/KK-TNCN** | 2016-02-25 13:00 → 2016-03-23 16:00 (+27d) | 2016-03-01 15:00 → 2016-03-29 09:00 (+28d) |  |  |  |  |  |

| ID | Task | Start | Finish | Duration | Total float | Predecessors | Other |
| --- | --- | --- | --- | --- | --- | --- | --- |
| 111 | Tờ khai quyết toán thuế TNCN (05KK-TNCN) | 2016-02-25 13:00 → 2016-03-23 16:00 (+27d) | 2016-02-26 12:00 → 2016-03-24 16:00 (+27d) |  |  |  |  |
| 112 | Bảng kê thu nhập chịu thuế và thu nhập cá nhân đối với thu nhập từ tiền lương.. Có ký hợp đồng lao động (05-1BK-TNCN) | 2016-02-26 13:00 → 2016-03-24 16:00 (+27d) | 2016-02-29 10:00 → 2016-03-25 14:00 (+25d) |  |  |  |  |
| 113 | Bảng kê thu nhập chịu thuế và thu nhập cá nhâận đã khấu trừ thu nhập từ tiến lương.. (05-2BK-TNCN) | 2016-02-29 10:00 → 2016-03-25 14:00 (+25d) | 2016-02-29 17:00 → 2016-03-28 11:00 (+28d) |  |  |  |  |
| 114 | Bảng kê thông tin người phụ thuộc giảm trừ gia cảnh (05-3BK-TNCN) | 2016-03-01 08:00 → 2016-03-28 11:00 (+27d) | 2016-03-01 15:00 → 2016-03-29 09:00 (+28d) |  |  |  |  |
| 115 | Danh mục tờ khai quyết toán năm thuế TNCN-05/KK-TNCN | 2016-03-01 15:00 → 2016-03-29 09:00 (+28d) | 2016-03-02 10:00 → 2016-03-29 14:00 (+27d) |  |  |  |  |
| 116 | Báo cáo tờ khai quyết toán năm thuế TNCN-05/KK-TNCN | 2016-03-02 10:00 → 2016-03-29 14:00 (+27d) | 2016-03-03 10:00 → 2016-03-30 14:00 (+27d) |  |  |  |  |
| 117 | Release nội bộ thuế TNCN | 2016-03-03 10:00 → 2016-03-30 14:00 (+27d) | 2016-03-03 10:00 → 2016-03-30 14:00 (+27d) |  |  |  |  |
| 118 | **Test** | 2016-01-06 08:00 → 2016-01-25 08:00 (+19d) | 2016-03-08 16:00 → 2016-04-05 10:00 (+28d) | 44.88d → 45.25d |  |  | constraint none → start no earlier than 2016-01-25 08:00 |
| 119 | **Danh mục chung** | 2016-01-06 08:00 → 2016-01-25 08:00 (+19d) | 2016-02-05 11:00 → 2016-03-03 15:00 (+27d) | 22.38d → 22.75d |  |  |  |
| 120 | Danh mục gia hạn | 2016-01-06 08:00 → 2016-01-25 08:00 (+19d) | 2016-01-06 10:00 → 2016-01-25 10:00 (+19d) |  | 7.75d → 8.12d |  |  |
| 121 | Danh mục ngành nghể | 2016-01-06 10:00 → 2016-01-25 10:00 (+19d) | 2016-01-06 12:00 → 2016-01-25 12:00 (+19d) |  | 7.75d → 8.12d |  |  |
| 122 | Danh mục ngành nghề có tỷ lệ thu nhập cao | 2016-02-05 09:00 → 2016-03-03 13:00 (+27d) | 2016-02-05 11:00 → 2016-03-03 15:00 (+27d) |  |  |  |  |
| 123 | **Thuế thu giá trị gia tăng** | 2016-01-06 13:00 → 2016-01-25 13:00 (+19d) | 2016-01-08 11:00 → 2016-01-26 11:00 (+18d) | 1.88d → 0.88d | 7.75d → 8.12d |  |  |
| 124 | **Cập nhật tờ khai thuế GTGT** | 2016-01-06 13:00 → 2016-01-25 13:00 (+19d) | 2016-01-07 09:00 → 2016-01-26 09:00 (+19d) |  | 7.75d → 8.12d |  |  |
| 125 | Tờ khai thuế GTGT (Tab 1) | 2016-01-06 13:00 → 2016-01-25 13:00 (+19d) | 2016-01-06 16:00 → 2016-01-25 16:00 (+19d) |  | 7.75d → 8.12d |  |  |
| 126 | Khai giải trình, bổ sung GTGT (Tab 2) | 2016-01-06 16:00 → 2016-01-25 16:00 (+19d) | 2016-01-07 09:00 → 2016-01-26 09:00 (+19d) |  | 7.75d → 8.12d |  |  |
| 127 | Danh sách tờ khai thuế GTGT | 2016-01-07 09:00 → 2016-01-26 09:00 (+19d) | 2016-01-07 11:00 → 2016-01-26 11:00 (+19d) |  | 7.75d → 8.12d |  |  |
| 128 | Release thuế GTGT | 2016-01-08 11:00 → 2016-01-26 11:00 (+18d) | 2016-01-08 11:00 → 2016-01-26 11:00 (+18d) |  | 16.88d → 17.62d |  |  |
| 129 | **Thuế tiêu thu đặc biệt** | 2016-01-14 11:00 → 2016-01-26 11:00 (+12d) | 2016-01-19 14:00 → 2016-02-01 14:00 (+13d) | 3.25d → 4.25d | 3.75d → 8.12d | 81 → 81, 123 |  |
| 130 | Danh mục nhóm thuế TTDB | 2016-01-14 11:00 → 2016-01-26 11:00 (+12d) | 2016-01-14 12:00 → 2016-01-26 12:00 (+12d) |  | 3.75d → 8.12d | 36, 70, 140 → none |  |
| 131 | Danh sách bảng kê thuế TTDB bán ra | 2016-01-14 13:00 → 2016-01-26 13:00 (+12d) | 2016-01-14 15:00 → 2016-01-26 15:00 (+12d) |  | 3.75d → 8.12d |  |  |
| 132 | Cập nhật bảng kê thuế TTDB bán ra | 2016-01-14 15:00 → 2016-01-26 15:00 (+12d) | 2016-01-15 09:00 → 2016-01-27 09:00 (+12d) |  | 3.75d → 8.12d |  |  |
| 133 | Danh sách bảng kê thuế TTDB mua vào | 2016-01-15 09:00 → 2016-01-27 09:00 (+12d) | 2016-01-15 11:00 → 2016-01-27 11:00 (+12d) |  | 3.75d → 8.12d |  |  |
| 134 | Cập nhật bảng kê thuế TTDB mua vào | 2016-01-15 11:00 → 2016-01-27 11:00 (+12d) | 2016-01-15 15:00 → 2016-01-27 15:00 (+12d) |  | 3.75d → 8.12d |  |  |
| 135 | Danh sách tờ khai thuế TTDB | 2016-01-15 15:00 → 2016-01-27 15:00 (+12d) | 2016-01-15 17:00 → 2016-01-27 17:00 (+12d) |  | 3.75d → 8.12d |  |  |
| 136 | Cập nhật tờ khai thuế TTDB | 2016-01-18 08:00 → 2016-01-28 08:00 (+10d) | 2016-01-18 14:00 → 2016-01-28 14:00 (+10d) |  | 3.75d → 8.12d |  |  |
| 137 | Báo cáo tờ khai thuế TTDB | 2016-01-18 14:00 → 2016-01-28 14:00 (+10d) | 2016-01-19 09:00 → 2016-01-29 09:00 (+10d) |  | 3.75d → 8.12d |  |  |
| 138 | Báo cáo khai giải trình, bổ sung TTDB | 2016-01-19 09:00 → 2016-01-29 09:00 (+10d) | 2016-01-19 14:00 → 2016-01-29 14:00 (+10d) |  | 3.75d → 8.12d |  |  |
| 139 | Báo cáo khai giải trình, bổ sung GTGT | 2016-01-07 11:00 → 2016-01-29 14:00 (+22d) | 2016-01-07 16:00 → 2016-02-01 09:00 (+25d) |  | 7.75d → 8.12d | 79, 127 → 79, 138 |  |
| 140 | Báo cáo tờ khai thuế GTGT | 2016-01-07 16:00 → 2016-02-01 09:00 (+25d) | 2016-01-08 11:00 → 2016-02-01 14:00 (+24d) |  | 7.75d → 8.12d |  |  |
| 141 | Release thuế TTDB | 2016-01-19 14:00 → 2016-02-01 14:00 (+13d) | 2016-01-19 14:00 → 2016-02-01 14:00 (+13d) |  | 4.38d → 8.12d |  |  |
| 142 | **Thuế bảo vệ môi trường** | 2016-02-02 09:00 → 2016-02-29 13:00 (+27d) | 2016-02-05 09:00 → 2016-03-03 12:00 (+27d) |  |  |  |  |
| 143 | Danh mục vật tư | 2016-02-02 09:00 → 2016-02-29 13:00 (+27d) | 2016-02-02 10:00 → 2016-02-29 14:00 (+27d) |  |  | 46, 83, 138 → 46, 83, 140 |  |
| 144 | Danh mục nhóm thuế BVMT | 2016-02-02 10:00 → 2016-02-29 14:00 (+27d) | 2016-02-02 12:00 → 2016-02-29 16:00 (+27d) |  |  |  |  |
| 145 | Cập nhật hóa đơn mua vào kiêm phiếu nhập kho | 2016-02-02 13:00 → 2016-02-29 16:00 (+27d) | 2016-02-02 14:00 → 2016-02-29 17:00 (+27d) |  |  |  |  |
| 146 | Cập nhật hóa đơn mua hàng nhập khẩu | 2016-02-02 14:00 → 2016-03-01 08:00 (+28d) | 2016-02-02 15:00 → 2016-03-01 09:00 (+28d) |  |  |  |  |
| 147 | Cập nhật hóa đơn mua dịch vụ | 2016-02-02 15:00 → 2016-03-01 09:00 (+28d) | 2016-02-02 16:00 → 2016-03-01 10:00 (+28d) |  |  |  |  |
| 148 | Cập nhật hóa đơn bán hàng kiêm phiếu xuất kho | 2016-02-02 16:00 → 2016-03-01 10:00 (+28d) | 2016-02-02 17:00 → 2016-03-01 11:00 (+28d) |  |  |  |  |
| 149 | Cập nhật hóa đơn bán dịch vụ | 2016-02-03 08:00 → 2016-03-01 11:00 (+27d) | 2016-02-03 09:00 → 2016-03-01 12:00 (+27d) |  |  |  |  |
| 150 | Cập nhật hóa đơn hàng bán trả lại giảm giá | 2016-02-03 09:00 → 2016-03-01 13:00 (+27d) | 2016-02-03 10:00 → 2016-03-01 14:00 (+27d) |  |  |  |  |
| 151 | Cập nhật tờ khai thuế BVMT | 2016-02-03 10:00 → 2016-03-01 14:00 (+27d) | 2016-02-03 16:00 → 2016-03-02 10:00 (+28d) |  |  |  |  |
| 152 | Danh sách tờ khai thuế BVMT | 2016-02-03 16:00 → 2016-03-02 10:00 (+28d) | 2016-02-04 09:00 → 2016-03-02 12:00 (+27d) |  |  |  |  |
| 153 | Báo cáo tờ khai thuế BVMT | 2016-02-04 09:00 → 2016-03-02 13:00 (+27d) | 2016-02-04 14:00 → 2016-03-02 17:00 (+27d) |  |  |  |  |
| 154 | Báo cáo khai giải trình, bổ sung BVMT | 2016-02-04 14:00 → 2016-03-03 08:00 (+28d) | 2016-02-05 09:00 → 2016-03-03 12:00 (+27d) |  |  |  |  |
| 155 | Release thuế BVMT | 2016-02-05 09:00 → 2016-03-03 12:00 (+27d) | 2016-02-05 09:00 → 2016-03-03 12:00 (+27d) |  |  |  |  |
| 156 | **Thuế thu nhập doanh nghiệp** | 2016-02-09 11:00 → 2016-03-07 15:00 (+27d) | 2016-02-11 15:00 → 2016-03-10 09:00 (+28d) |  |  |  |  |
| 157 | **Cập nhật tờ khai thuế TNDN** | 2016-02-09 11:00 → 2016-03-07 15:00 (+27d) | 2016-02-10 12:00 → 2016-03-08 16:00 (+27d) |  |  |  |  |
| 158 | Tờ khai thuế TNDN (Tab 1) | 2016-02-09 11:00 → 2016-03-07 15:00 (+27d) | 2016-02-09 15:00 → 2016-03-08 09:00 (+28d) |  |  |  |  |
| 159 | Kết quả kinh doanh theo báo cáo tài chính (Tab 2) | 2016-02-09 15:00 → 2016-03-08 09:00 (+28d) | 2016-02-09 17:00 → 2016-03-08 11:00 (+28d) |  |  |  |  |
| 160 | Kết chuyển lãi lỗ (Tab 3) | 2016-02-10 08:00 → 2016-03-08 11:00 (+27d) | 2016-02-10 10:00 → 2016-03-08 14:00 (+27d) |  |  |  |  |
| 161 | Khai giải trình, bổ sung TNDN (Tab 4) | 2016-02-10 10:00 → 2016-03-08 14:00 (+27d) | 2016-02-10 12:00 → 2016-03-08 16:00 (+27d) |  |  |  |  |
| 162 | Danh sách tờ khai thuế TNDN | 2016-02-10 13:00 → 2016-03-08 16:00 (+27d) | 2016-02-10 15:00 → 2016-03-09 09:00 (+28d) |  |  |  |  |
| 163 | Báo cáo tờ khai thuế TNDN | 2016-02-10 15:00 → 2016-03-09 09:00 (+28d) | 2016-02-11 10:00 → 2016-03-09 14:00 (+27d) |  |  |  |  |
| 164 | Báo cáo khai giải trình, bổ sung TNDN | 2016-02-11 10:00 → 2016-03-09 14:00 (+27d) | 2016-02-11 15:00 → 2016-03-10 09:00 (+28d) |  |  |  |  |
| 165 | Release thuế TNDN | 2016-02-11 15:00 → 2016-03-10 09:00 (+28d) | 2016-02-11 15:00 → 2016-03-10 09:00 (+28d) |  |  |  |  |
| 166 | **Thuế thu nhập cá nhân** | 2016-03-03 10:00 → 2016-03-30 14:00 (+27d) | 2016-03-08 16:00 → 2016-04-05 10:00 (+28d) |  |  |  |  |
| 167 | Cập nhật tờ khai thuế TNCN-02/KK-TNCN | 2016-03-03 10:00 → 2016-03-30 14:00 (+27d) | 2016-03-03 15:00 → 2016-03-31 09:00 (+28d) |  |  |  |  |
| 168 | Danh sách tờ khai thuế TNCN-02/KK-TNCN | 2016-03-03 15:00 → 2016-03-31 09:00 (+28d) | 2016-03-03 17:00 → 2016-03-31 11:00 (+28d) |  |  |  |  |
| 169 | Báo cáo tờ khai thuế TNCN-02/KK-TNCN | 2016-03-04 08:00 → 2016-03-31 11:00 (+27d) | 2016-03-04 12:00 → 2016-03-31 16:00 (+27d) |  |  |  |  |
| 170 | **Cập nhật tờ khai quyết toán năm thuế TNCN-05/KK-TNCN** | 2016-03-04 13:00 → 2016-03-31 16:00 (+27d) | 2016-03-08 09:00 → 2016-04-04 12:00 (+27d) |  |  |  |  |
| 171 | Tờ khai quyết toán thuế TNCN (05KK-TNCN) | 2016-03-04 13:00 → 2016-03-31 16:00 (+27d) | 2016-03-04 17:00 → 2016-04-01 11:00 (+28d) |  |  |  |  |
| 172 | Bảng kê thu nhập chịu thuế và thu nhập cá nhân đối với thu nhập từ tiền lương.. Có ký hợp đồng lao động (05-1BK-TNCN) | 2016-03-07 08:00 → 2016-04-01 11:00 (+25d) | 2016-03-07 11:00 → 2016-04-01 15:00 (+25d) |  |  |  |  |
| 173 | Bảng kê thu nhập chịu thuế và thu nhập cá nhâận đã khấu trừ thu nhập từ tiến lương.. (05-2BK-TNCN) | 2016-03-07 11:00 → 2016-04-01 15:00 (+25d) | 2016-03-07 15:00 → 2016-04-04 09:00 (+28d) |  |  |  |  |
| 174 | Bảng kê thông tin người phụ thuộc giảm trừ gia cảnh (05-3BK-TNCN) | 2016-03-07 15:00 → 2016-04-04 09:00 (+28d) | 2016-03-08 09:00 → 2016-04-04 12:00 (+27d) |  |  |  |  |
| 175 | Danh mục tờ khai quyết toán năm thuế TNCN-05/KK-TNCN | 2016-03-08 09:00 → 2016-04-04 13:00 (+27d) | 2016-03-08 11:00 → 2016-04-04 15:00 (+27d) |  |  |  |  |
| 176 | Báo cáo tờ khai quyết toán năm thuế TNCN-05/KK-TNCN | 2016-03-08 11:00 → 2016-04-04 15:00 (+27d) | 2016-03-08 16:00 → 2016-04-05 10:00 (+28d) |  |  |  |  |
| 177 | Release thuế TNCN | 2016-03-08 16:00 → 2016-04-05 10:00 (+28d) | 2016-03-08 16:00 → 2016-04-05 10:00 (+28d) |  |  |  |  |
| 178 | Hoàn thành báo cáo thuế | 2016-03-08 16:00 → 2016-04-05 10:00 (+28d) | 2016-03-08 16:00 → 2016-04-05 10:00 (+28d) |  |  |  |  |

## Version 10 (data date 2015-05-08, saved 2015-12-29)

Note of the change: Tiến độ thực hiện

Last finish stays 2016-04-05. Complete tasks 30 → 32.

Changed:

| ID | Task | Finish | Complete | Total float |
| --- | --- | --- | --- | --- |
| 1 | **ACC 2015** |  | 30% → 32% |  |
| 2 | **Báo cáo thuế** |  | 30% → 32% |  |
| 58 | **Coding** |  | 29% → 33% |  |
| 69 | **Thuế tiêu thu đặc biệt** |  | 29% → 38% |  |
| 73 | Danh sách bảng kê thuế TTDB mua vào | 2015-12-21 14:00 A | 50% → 100% | 1.5d → none |
| 74 | Cập nhật bảng kê thuế TTDB mua vào | 2015-12-24 14:00 A | 50% → 100% | 0.25d → none |
| 76 | Cập nhật tờ khai thuế TTDB |  | 20% → 25% |  |

## Version 11 (data date 2015-05-08, saved 2015-12-30)

Note of the change: Cập nhật tiến độ thực hiện

Last finish stays 2016-04-05.

Changed:

| ID | Task | Complete |
| --- | --- | --- |
| 1 | **ACC 2015** | 32% → 33% |
| 2 | **Báo cáo thuế** | 32% → 33% |
| 58 | **Coding** | 33% → 34% |
| 69 | **Thuế tiêu thu đặc biệt** | 38% → 42% |
| 76 | Cập nhật tờ khai thuế TTDB | 25% → 45% |

## Version 12 (data date 2015-05-08, saved 2016-01-06)

Note of the change: Cập nhật tiến độ

Last finish stays 2016-04-05.

Changed:

| ID | Task | Complete | Total float |
| --- | --- | --- | --- |
| 1 | **ACC 2015** | 33% → 37% |  |
| 2 | **Báo cáo thuế** | 33% → 37% |  |
| 58 | **Coding** | 34% → 40% |  |
| 69 | **Thuế tiêu thu đặc biệt** | 42% → 56% |  |
| 75 | Danh sách tờ khai thuế TTDB | 10% → 90% | 1.25d → 5d |
| 76 | Cập nhật tờ khai thuế TTDB | 45% → 80% |  |

## Version 13 (data date 2015-05-08, saved 2016-01-11)

Note of the change: cập nhật tiến độ thực hiện

Last finish stays 2016-04-05. Complete tasks 32 → 34.

Changed:

| ID | Task | Start | Finish | Complete | Total float |
| --- | --- | --- | --- | --- | --- |
| 1 | **ACC 2015** |  |  | 37% → 39% |  |
| 2 | **Báo cáo thuế** |  |  | 37% → 39% |  |
| 58 | **Coding** |  |  | 40% → 44% |  |
| 69 | **Thuế tiêu thu đặc biệt** |  |  | 56% → 65% |  |
| 75 | Danh sách tờ khai thuế TTDB |  | 2015-12-29 09:00 A | 90% → 100% | 5d → none |
| 76 | Cập nhật tờ khai thuế TTDB |  | 2016-01-07 11:00 A | 80% → 100% | 0d → none |
| 77 | Báo cáo tờ khai thuế TTDB | 2016-01-07 11:00 A |  | 0% → 45% |  |

## Version 14 (data date 2015-05-08, saved 2016-01-13)

Note of the change: cập nhật tiến độ

Last finish stays 2016-04-05.

Changed:

| ID | Task | Start | Complete | Total float |
| --- | --- | --- | --- | --- |
| 1 | **ACC 2015** |  | 39% → 41% |  |
| 2 | **Báo cáo thuế** |  | 39% → 41% |  |
| 58 | **Coding** |  | 44% → 47% |  |
| 69 | **Thuế tiêu thu đặc biệt** |  | 65% → 74% |  |
| 77 | Báo cáo tờ khai thuế TTDB |  | 45% → 65% | 0d → 2.1d |
| 78 | Báo cáo khai giải trình, bổ sung TTDB | 2016-01-12 11:00 A | 0% → 70% |  |

## Version 15 (data date 2015-05-08, saved 2016-02-02)

Note of the change: Cập nhật tiến độ thực hiện

Last finish stays 2016-04-05. Complete tasks 34 → 37.

Changed:

| ID | Task | Start | Finish | Complete | Total float |
| --- | --- | --- | --- | --- | --- |
| 1 | **ACC 2015** |  |  | 41% → 51% |  |
| 2 | **Báo cáo thuế** |  |  | 41% → 51% |  |
| 58 | **Coding** |  |  | 47% → 62% |  |
| 69 | **Thuế tiêu thu đặc biệt** |  |  | 74% → 87% | 0d → 9.12d |
| 77 | Báo cáo tờ khai thuế TTDB |  |  | 65% → 75% |  |
| 79 | Báo cáo khai giải trình, bổ sung GTGT | 2016-01-15 11:00 A |  | 0% → 65% | 0d → 1.2d |
| 80 | Báo cáo tờ khai thuế GTGT | 2016-01-20 11:00 A |  | 0% → 60% | 0d → 9.12d |
| 82 | **Thuế bảo vệ môi trường** | 2016-01-25 11:00 A |  | 0% → 36% | 0d → 2d |
| 83 | Danh mục vật tư | 2016-01-25 11:00 A | 2016-01-25 16:00 A | 0% → 100% | 0d → none |
| 84 | Danh mục nhóm thuế BVMT | 2016-01-25 16:00 A | 2016-01-26 16:00 A | 0% → 100% | 0d → none |
| 88 | Cập nhật hóa đơn bán hàng kiêm phiếu xuất kho | 2016-01-28 08:00 A |  | 0% → 15% | 0d → 1.5d |
| 91 | Cập nhật tờ khai thuế BVMT | 2016-02-18 08:00 A | 2016-02-24 17:00 A | 0% → 100% | 0d → none |

## Version 16 (data date 2015-05-08, saved 2016-02-04)

Note of the change: Cập nhật tiến độ thực hiện

Last finish stays 2016-04-05.

Changed:

| ID | Task | Start | Complete | Total float |
| --- | --- | --- | --- | --- |
| 1 | **ACC 2015** |  | 51% → 54% |  |
| 2 | **Báo cáo thuế** |  | 51% → 54% |  |
| 58 | **Coding** |  | 62% → 68% |  |
| 82 | **Thuế bảo vệ môi trường** |  | 36% → 61% | 2d → 0d |
| 88 | Cập nhật hóa đơn bán hàng kiêm phiếu xuất kho |  | 15% → 95% | 1.5d → 2.4d |
| 89 | Cập nhật hóa đơn bán dịch vụ | 2016-02-02 08:00 A | 0% → 80% |  |
