# [KIMYEN]_Implementation_Shedule

How a schedule from MS Project changed from version to version. A marks actual dates.

## Version 1 (data date 2017-10-10, saved 2018-02-05)

Note of the change: Commit tiến độ dự án Kim Yến

| ID | WBS | Task | Duration | Start | Finish | Predecessors | Complete | Total float | Constraint |
| --- | --- | --- | --- | --- | --- | --- | --- | --- | --- |
| 1 | 1 | **KIM YẾN** | 132.12d | 2017-08-09 08:00 A | 2018-02-12 09:00 |  | 40% | -6.38d | finish no later than 2017-09-15 17:00 |
| 2 | 1.1 | **Initiation** | 1d | 2017-08-09 08:00 A | 2017-08-09 17:00 A |  | 100% |  |  |
| 3 |  | Làm prototype nghiệp vụ quản lý hoa hồng | 1d | 2017-08-09 08:00 A | 2017-08-09 17:00 A |  | 100% |  | start no earlier than 2017-08-09 08:00 |
| 4 | 1.2 | **Analysis** | 49.12d | 2017-08-17 08:00 A | 2017-10-26 09:00 |  | 64% | -5.85d |  |
| 5 | 1.2.1 | **Release 1** | 2.5d | 2017-08-17 08:00 A | 2017-08-21 12:00 |  | 50% | 1.22d |  |
| 6 | 1.2.1.1 | **Quản lý hoa hồng** | 2.5d | 2017-08-17 08:00 A | 2017-08-21 12:00 |  | 50% | 1.22d |  |
| 7 |  | Cập nhật cửa hàng | 3h | 2017-08-17 08:00 A | 2017-08-17 11:00 A |  | 100% |  |  |
| 8 |  | Thiết lập thông tin công ty | 1h | 2017-08-17 11:00 A | 2017-08-17 12:00 A | 7 | 100% |  |  |
| 9 |  | Danh mục mức hoa hồng theo doanh thu lũy kế | 2h | 2017-08-17 13:00 A | 2017-08-17 15:00 A | 8 | 100% |  |  |
| 10 |  | Cập nhật mức hoa hồng theo doanh thu lũy kế | 2h | 2017-08-17 15:00 A | 2017-08-17 17:00 A | 9 | 100% |  |  |
| 11 |  | Xem chi tiết mức hoa hồng theo doanh thu lũy kế | 3h | 2017-08-18 08:00 A | 2017-08-18 11:00 A | 10 | 100% |  |  |
| 12 |  | Cập nhật hội viên | 1h | 2017-08-18 11:00 A | 2017-08-18 12:00 A | 11 | 100% |  |  |
| 13 |  | Sơ đồ cây nhân viên hưởng hoa hồng | 4h | 2017-08-18 08:00 A | 2017-08-18 12:00 A |  | 100% |  | start no earlier than 2017-08-18 08:00 |
| 14 |  | Báo cáo chi tiết huê hồng từng nhân viên, nhập mã nhân viên để in báo cáo chi tiết | 4h | 2017-08-18 13:00 | 2017-08-18 17:00 | 12 |  | 0.97d |  |
| 15 |  | Báo cáo tổng hợp huê hồng từng nhân viên, nhập mã nhân viên để in báo cáo tổng hợp | 4h | 2017-08-21 08:00 | 2017-08-21 12:00 | 14 |  | 1.22d |  |
| 16 |  | Báo cáo chi tiết tất cả nhân viên hưởng huê hồng trong tháng | 4h | 2017-08-18 13:00 | 2017-08-18 17:00 | 13 |  | 0.47d |  |
| 17 |  | Báo cáo tổng hợp tất cả nhân viên hưởng huê hồng trong tháng | 4h | 2017-08-21 08:00 | 2017-08-21 12:00 | 16 |  | 0.97d |  |
| 18 | 1.2.2 | **Release 2** | 0.65d | 2017-08-21 13:00 A | 2017-08-22 09:12 A |  | 100% |  |  |
| 19 | 1.2.2.1 | **Gộp đối tượng khách hàng** | 0.28d | 2017-08-21 13:00 A | 2017-08-21 15:12 A |  | 100% |  |  |
| 20 |  | Danh mục khách hàng | 0.5h | 2017-08-21 13:00 A | 2017-08-21 13:30 A | 15 | 100% |  |  |
| 21 |  | Cập nhật khách hàng | 0.5h | 2017-08-21 13:30 A | 2017-08-21 14:00 A | 20 | 100% |  |  |
| 22 |  | Xem chi tiết khách hàng | 0.5h | 2017-08-21 14:00 A | 2017-08-21 14:30 A | 21 | 100% |  |  |
| 23 |  | In lịch sử thông tin khách hàng | 0.2h | 2017-08-21 14:30 A | 2017-08-21 14:42 A | 22 | 100% |  |  |
| 24 |  | Import khách hàng | 0.5h | 2017-08-21 14:42 A | 2017-08-21 15:12 A | 23 | 100% |  |  |
| 25 | 1.2.2.2 | **Call center** | 0.38d | 2017-08-21 15:12 A | 2017-08-22 09:12 A |  | 100% |  |  |
| 26 |  | Hỗ trợ | 0.5h | 2017-08-21 15:12 A | 2017-08-21 15:42 A | 24 | 100% |  |  |
| 27 |  | Gọi đến | 0.3h | 2017-08-21 15:42 A | 2017-08-21 16:00 A | 26 | 100% |  |  |
| 28 |  | Lịch sử cuộc gọi | 0.3h | 2017-08-21 16:00 A | 2017-08-21 16:18 A | 27 | 100% |  |  |
| 29 |  | Công nợ | 0.3h | 2017-08-21 16:18 A | 2017-08-21 16:36 A | 28 | 100% |  |  |
| 30 |  | Thêm nhanh khách hàng | 0.3h | 2017-08-21 16:36 A | 2017-08-21 16:54 A | 29 | 100% |  |  |
| 31 |  | Thêm nhanh đơn hàng | 0.3h | 2017-08-21 16:54 A | 2017-08-22 08:12 A | 30 | 100% |  |  |
| 32 |  | Chọn khách hàng | 0.5h | 2017-08-22 08:12 A | 2017-08-22 08:42 A | 31 | 100% |  |  |
| 33 |  | Xem nhanh công nợ | 0.5h | 2017-08-22 08:42 A | 2017-08-22 09:12 A | 32 | 100% |  |  |
| 34 | 1.2.3 | **Release 3** | 19.27d | 2017-09-21 08:00 A | 2017-10-18 10:12 |  | 94% | 0d |  |
| 35 | 1.2.3.1 | **Quản lý công việc** | 19.27d | 2017-09-21 08:00 A | 2017-10-18 10:12 |  | 94% | 0d |  |
| 36 |  | Thiết lập hệ thống | 2h | 2017-09-21 08:00 A | 2017-09-21 10:00 A | 33 | 100% |  | start no earlier than 2017-09-21 08:00 |
| 37 |  | Danh mục thiết lập thời gian làm việc | 3h | 2017-09-21 10:00 A | 2017-09-21 14:00 A | 36 | 100% |  |  |
| 38 |  | Xem chi tiết thời gian làm việc | 3h | 2017-09-21 14:00 A | 2017-09-21 17:00 A | 37 | 100% |  |  |
| 39 |  | Thiết lập thời gian làm việc | 3h | 2017-09-21 09:12 A | 2017-09-21 13:12 A | 38 | 100% |  | start no earlier than 2017-09-21 09:12 |
| 40 |  | Thông báo | 4h | 2017-09-21 13:12 | 2017-09-22 08:12 | 39 |  | -15.15d |  |
| 41 |  | Danh mục thông báo | 3h | 2017-09-22 08:12 A | 2017-09-22 11:12 A | 40, 188 | 100% |  |  |
| 42 |  | Cập nhật thông báo | 4h | 2017-09-22 11:12 A | 2017-09-22 16:12 A | 41 | 100% |  |  |
| 43 |  | Xem thông báo | 3h | 2017-09-22 16:12 A | 2017-09-25 10:12 A | 42 | 100% |  |  |
| 44 |  | Danh mục quy trình | 3h | 2017-10-05 14:12 A | 2017-10-06 08:12 A | 43, 206 | 100% |  |  |
| 45 |  | Xem chi tiết quy trình | 3h | 2017-10-06 08:12 A | 2017-10-06 11:12 A | 44 | 100% |  |  |
| 46 |  | Cập nhật quy trình | 3h | 2017-10-06 11:12 A | 2017-10-06 15:12 A | 45 | 100% |  |  |
| 47 |  | Danh mục bước | 3h | 2017-10-06 15:12 A | 2017-10-09 09:12 A | 46 | 100% |  |  |
| 48 |  | Xem chi tiết bước | 3h | 2017-10-09 09:12 A | 2017-10-09 13:12 A | 47 | 100% |  |  |
| 49 |  | Cập nhật bước | 3h | 2017-10-09 13:12 A | 2017-10-09 16:12 A | 48 | 100% |  |  |
| 50 |  | Cập nhật mẫu công việc theo bước | 4h | 2017-10-09 16:12 A | 2017-10-10 11:12 A | 49 | 100% |  |  |
| 51 |  | Danh mục trạng thái | 3h | 2017-10-10 11:12 A | 2017-10-10 15:12 A | 50 | 100% |  |  |
| 52 |  | Xem chi tiết trạng thái | 3h | 2017-10-10 15:12 A | 2017-10-11 09:12 A | 51 | 100% |  |  |
| 53 |  | Cập nhật trạng thái | 2h | 2017-10-11 09:12 A | 2017-10-11 11:12 A | 52 | 100% |  |  |
| 54 |  | Danh sách mẫu dự án/nhóm công việc | 3h | 2017-10-11 11:12 A | 2017-10-11 15:12 A | 53 | 100% |  |  |
| 55 |  | Xem chi tiết mẫu dự án/nhóm công việc | 3h | 2017-10-11 15:12 A | 2017-10-12 09:12 A | 54 | 100% |  |  |
| 56 |  | Cập nhật mẫu dự án/nhóm công việc | 3h | 2017-10-12 09:12 A | 2017-10-12 13:12 A | 55 | 100% |  |  |
| 57 |  | Danh sách dự án/nhóm công việc (Dạng List) | 4h | 2017-10-12 13:12 A | 2017-10-13 08:12 | 56 | 90% | -26.65d |  |
| 58 |  | Danh sách dự án/nhóm công việc (Dạng Kanban) | 5h | 2017-10-13 08:12 A | 2017-10-13 14:12 | 57 | 90% | -30.15d |  |
| 59 |  | Danh sách dự án/nhóm công việc (Dạng Gantt) | 4h | 2017-10-13 14:12 A | 2017-10-16 09:12 | 58 | 90% | -29.9d |  |
| 60 |  | Cập nhật dự án/nhóm công việc | 4h | 2017-10-16 09:12 A | 2017-10-16 14:12 | 59 | 90% | 0d |  |
| 61 |  | Xem dự án/nhóm công việc | 4h | 2017-10-16 14:12 A | 2017-10-17 09:12 | 60 | 90% | 0d |  |
| 62 |  | Chọn hợp đồng | 3h | 2017-10-17 09:12 A | 2017-10-17 13:12 A | 61 | 100% |  |  |
| 63 |  | Chọn nhân sự | 3h | 2017-10-17 13:12 A | 2017-10-17 16:12 A | 62 | 100% |  |  |
| 64 |  | Chọn phòng ban | 3h | 2017-10-17 16:12 A | 2017-10-18 10:12 A | 63 | 100% |  |  |
| 65 | 1.2.4 | **Release 4** | 11.12d | 2017-10-11 08:00 A | 2017-10-26 09:00 |  | 37% | -6d |  |
| 66 | 1.2.4.1 | **Quản lý công việc** | 11.12d | 2017-10-11 08:00 A | 2017-10-26 09:00 |  | 37% | -6d |  |
| 67 |  | Danh sách công việc (Dạng List) | 3h | 2017-10-11 08:00 A | 2017-10-11 11:00 |  | 80% | -36.62d | start no earlier than 2017-10-11 08:00 |
| 68 |  | Danh sách công việc (Dạng Kanban) | 5h | 2017-10-11 11:00 A | 2017-10-11 17:00 | 67 | 80% | -27d |  |
| 69 |  | Danh sách công việc (Dạng Lịch) | 3h | 2017-10-12 08:00 A | 2017-10-12 11:00 | 68 | 80% | -26.88d |  |
| 70 |  | Danh sách công việc (Dạng Gantt) | 4h | 2017-10-12 11:00 A | 2017-10-12 16:00 | 69 | 80% | -27.12d |  |

| ID | WBS | Task | Duration | Start | Finish | Predecessors | Complete | Total float | Constraint |
| --- | --- | --- | --- | --- | --- | --- | --- | --- | --- |
| 71 |  | Import công việc | 8h | 2017-10-12 16:00 A | 2017-10-13 16:00 | 70 | 90% | 0d |  |
| 72 |  | Cập nhật công việc | 5h | 2017-10-13 16:00 A | 2017-10-16 12:00 | 71 | 80% | -38.62d |  |
| 73 |  | Xem thông tin công việc | 3h | 2017-10-16 13:00 A | 2017-10-16 16:00 | 72 | 70% | -38.5d |  |
| 74 |  | Chọn công việc trước | 4h | 2017-10-16 16:00 A | 2017-10-17 11:00 | 73 | 90% | 0d |  |
| 75 |  | Nhập checklist công việc | 2h | 2017-10-17 11:00 | 2017-10-17 14:00 | 74 |  | -38.5d |  |
| 76 |  | Cập nhật công việc hàng loạt | 4h | 2017-10-17 14:00 A | 2017-10-18 09:00 | 75 | 90% | -41.62d |  |
| 77 |  | Thiết kế Dasboard chung | 8h | 2017-10-18 09:00 | 2017-10-19 09:00 | 76 |  | -41.62d |  |
| 78 |  | Thiết lập thời gian lặp lại | 4h | 2017-10-19 09:00 | 2017-10-19 14:00 | 77 |  | -41.62d |  |
| 79 |  | Màn hình calendar hiển thị theo dạng lịch | 4h | 2017-10-19 14:00 | 2017-10-20 09:00 | 78 |  | -41.62d |  |
| 80 |  | Màn hình calendar hiển thị theo dạng list | 6h | 2017-10-20 09:00 | 2017-10-20 16:00 | 79 |  | -41.62d |  |
| 81 |  | Lập lịch | 4h | 2017-10-20 16:00 | 2017-10-23 11:00 | 80 |  | -41.62d |  |
| 82 |  | Gửi mail (cho Nhân sự tham gia) -> gửi mail nội bộ | 4h | 2017-10-23 11:00 | 2017-10-23 16:00 | 81 |  | -41.62d |  |
| 83 |  | Thiết lập gửi mail | 4h | 2017-10-23 16:00 | 2017-10-24 11:00 | 82 |  | -41.62d |  |
| 84 |  | Thiết lập cảnh báo | 4h | 2017-10-24 11:00 | 2017-10-24 16:00 | 83 |  | -41.62d |  |
| 85 |  | Focus sheet | 4h | 2017-10-24 16:00 | 2017-10-25 11:00 | 84 |  | -41.62d |  |
| 86 |  | Báo cáo công việc theo dự án | 3h | 2017-10-25 11:00 | 2017-10-25 15:00 | 85 |  | -41.38d |  |
| 87 |  | Báo cáo công việc theo nhân viên | 3h | 2017-10-25 15:00 | 2017-10-26 09:00 | 86 |  | -41d |  |
| 88 |  | Analysis Completed | 0d | 2017-08-17 08:00 | 2017-08-17 08:00 |  |  | 21d |  |
| 89 | 1.4 | **Development** | 119.88d | 2017-08-17 11:00 A | 2018-02-02 10:00 |  | 44% | -0.5d |  |
| 90 | 1.4.1 | **Release 1** | 3.75d | 2017-08-17 11:00 A | 2017-08-23 09:00 |  | 42% | 0.34d |  |
| 91 | 1.4.1.1 | **Quản lý hoa hồng** | 3.75d | 2017-08-17 11:00 A | 2017-08-23 09:00 |  | 42% | 0.34d |  |
| 92 |  | Cập nhật cửa hàng | 4h | 2017-08-17 11:00 A | 2017-08-17 16:00 A | 7 | 100% |  |  |
| 93 |  | Thiết lập thông tin công ty | 1h | 2017-08-17 16:00 A | 2017-08-17 17:00 A | 92, 8 | 100% |  |  |
| 94 |  | Danh mục mức hoa hồng theo doanh thu lũy kế | 2h | 2017-08-18 08:00 A | 2017-08-18 10:00 A | 93, 9 | 100% |  |  |
| 95 |  | Cập nhật mức hoa hồng theo doanh thu lũy kế | 3h | 2017-08-18 10:00 A | 2017-08-18 14:00 A | 94, 10 | 100% |  |  |
| 96 |  | Xem chi tiết mức hoa hồng theo doanh thu lũy kế | 3h | 2017-08-18 14:00 A | 2017-08-18 17:00 A | 95, 11 | 100% |  |  |
| 97 |  | Cập nhật hội viên | 1h | 2017-08-21 08:00 A | 2017-08-21 09:00 A | 96, 12 | 100% |  |  |
| 98 |  | Sơ đồ cây nhân viên hưởng hoa hồng | 6h | 2017-08-18 13:00 A | 2017-08-21 10:00 A | 13, 92 | 100% |  |  |
| 99 |  | Báo cáo chi tiết huê hồng từng nhân viên, nhập mã nhân viên để in báo cáo chi tiết | 6h | 2017-08-21 10:00 | 2017-08-21 17:00 | 14, 98 |  | 0.72d |  |
| 100 |  | Báo cáo tổng hợp huê hồng từng nhân viên, nhập mã nhân viên để in báo cáo tổng hợp | 6h | 2017-08-22 08:00 | 2017-08-22 15:00 | 99, 15 |  | 0.72d |  |
| 101 |  | Báo cáo chi tiết tất cả nhân viên hưởng huê hồng trong tháng | 8h | 2017-08-21 09:00 | 2017-08-22 09:00 | 16, 97 |  | 0.34d |  |
| 102 |  | Báo cáo tổng hợp tất cả nhân viên hưởng huê hồng trong tháng | 8h | 2017-08-22 09:00 | 2017-08-23 09:00 | 101, 17 |  | 0.34d |  |
| 103 | 1.4.2 | **Release 2** | 1.69d | 2017-10-02 15:00 A | 2017-10-04 11:30 A |  | 100% |  |  |
| 104 | 1.4.2.1 | **Gộp đối tượng khách hàng** | 0.56d | 2017-10-02 15:00 A | 2017-10-03 10:30 A |  | 100% |  |  |
| 105 |  | Danh mục khách hàng | 1h | 2017-10-02 15:00 A | 2017-10-02 16:00 A | 20, 100 | 100% |  | start no earlier than 2017-10-02 15:00 |
| 106 |  | Cập nhật khách hàng | 1h | 2017-10-02 16:00 A | 2017-10-02 17:00 A | 105, 21 | 100% |  |  |
| 107 |  | Xem chi tiết khách hàng | 1h | 2017-10-03 08:00 A | 2017-10-03 09:00 A | 106, 22, 276 | 100% |  |  |
| 108 |  | In lịch sử thông tin khách hàng | 0.5h | 2017-10-03 09:00 A | 2017-10-03 09:30 A | 107, 23 | 100% |  |  |
| 109 |  | Import khách hàng | 1h | 2017-10-03 09:30 A | 2017-10-03 10:30 A | 108, 24 | 100% |  |  |
| 110 | 1.4.2.2 | **Call center** | 1.12d | 2017-10-03 10:30 A | 2017-10-04 11:30 A |  | 100% |  |  |
| 111 |  | Hỗ trợ | 0.5h | 2017-10-03 10:30 A | 2017-10-03 11:00 A | 109, 26 | 100% |  |  |
| 112 |  | Gọi đến | 1h | 2017-10-03 11:00 A | 2017-10-03 12:00 A | 111, 27 | 100% |  |  |
| 113 |  | Lịch sử cuộc gọi | 0.5h | 2017-10-03 13:00 A | 2017-10-03 13:30 A | 112, 28 | 100% |  |  |
| 114 |  | Công nợ | 1h | 2017-10-03 13:30 A | 2017-10-03 14:30 A | 113, 29 | 100% |  |  |
| 115 |  | Thêm nhanh khách hàng | 2h | 2017-10-03 14:30 A | 2017-10-03 16:30 A | 114, 30 | 100% |  |  |
| 116 |  | Thêm nhanh đơn hàng | 2h | 2017-10-03 16:30 A | 2017-10-04 09:30 A | 115, 31 | 100% |  |  |
| 117 |  | Chọn khách hàng | 1h | 2017-10-04 09:30 A | 2017-10-04 10:30 A | 116, 32 | 100% |  |  |
| 118 |  | Xem nhanh công nợ | 1h | 2017-10-04 10:30 A | 2017-10-04 11:30 A | 117, 33 | 100% |  |  |
| 119 | 1.4.3 | **Release 3** | 86.59d | 2017-10-04 14:18 A | 2018-02-02 10:00 |  | 66% | -0.5d |  |
| 120 | 1.4.3.1 | **Quản lý công việc** | 86.59d | 2017-10-04 14:18 A | 2018-02-02 10:00 |  | 66% | -0.5d |  |
| 121 |  | Danh mục thiết lập thời gian làm việc | 1h | 2017-12-27 14:00 | 2017-12-27 15:00 | 278, 37 |  | -81.62d | start no earlier than 2017-12-27 14:00 |
| 122 |  | Xem chi tiết thời gian làm việc | 2h | 2017-12-27 15:00 | 2017-12-27 17:00 | 121, 38 |  | -81.62d |  |
| 123 |  | Thiết lập thời gian làm việc | 4h | 2017-12-28 08:00 | 2017-12-28 12:00 | 122, 39 |  | -81.62d |  |
| 124 |  | Thiết lập hệ thống | 8h | 2017-12-14 10:00 | 2017-12-15 10:00 | 36 |  | -80.25d | start no earlier than 2017-12-14 10:00 |
| 125 |  | Sửa giao diện menu tổng | 8h | 2017-10-04 14:18 A | 2017-10-05 14:18 A | 294 | 100% |  |  |
| 126 |  | Điều kiện tìm kiếm động ở các màn hình tìm kiếm | 14h | 2017-10-05 14:18 A | 2017-10-09 11:18 A | 125 | 100% |  |  |
| 127 |  | Group dữ liệu theo ý người dùng khi hiển thị dạng list | 8h | 2018-01-01 13:00 | 2018-01-02 12:00 | 126, 175 |  | -87.62d |  |
| 128 |  | Thông báo | 5h | 2018-01-02 13:00 | 2018-01-03 09:00 | 127, 40 |  | -87.62d |  |
| 129 |  | Danh mục thông báo | 4h | 2017-12-15 10:00 A | 2017-12-15 15:00 A | 41, 124 | 100% |  |  |
| 130 |  | Cập nhật thông báo | 6h | 2017-12-15 15:00 A | 2017-12-18 12:00 A | 129, 42 | 100% |  |  |
| 131 |  | Xem thông báo | 4h | 2017-12-18 13:00 A | 2017-12-18 17:00 A | 130, 43 | 100% |  |  |
| 132 |  | Danh mục quy trình | 4h | 2017-12-19 13:00 A | 2017-12-19 17:00 A | 44, 131 | 100% |  |  |
| 133 |  | Xem chi tiết quy trình | 6h | 2017-12-20 08:00 A | 2017-12-21 10:00 A | 132, 45 | 100% |  |  |
| 134 |  | Cập nhật quy trình | 4h | 2017-12-21 10:00 A | 2017-12-21 15:00 A | 133, 46 | 100% |  |  |
| 135 |  | Danh mục bước | 4h | 2017-12-21 15:00 A | 2017-12-22 10:00 A | 134, 47 | 100% |  |  |
| 136 |  | Xem chi tiết bước | 6h | 2017-12-22 10:00 A | 2017-12-22 17:00 A | 135, 48 | 100% |  |  |
| 137 |  | Cập nhật bước | 4h | 2017-12-25 08:00 A | 2017-12-25 12:00 A | 136, 49 | 100% |  |  |
| 138 |  | Cập nhật mẫu công việc theo bước | 5h | 2017-12-25 13:00 A | 2017-12-26 14:00 A | 137, 50 | 100% |  |  |
| 139 |  | Danh mục trạng thái | 4h | 2017-12-26 14:00 A | 2017-12-27 09:00 A | 138, 51 | 100% |  |  |
| 140 |  | Xem chi tiết trạng thái | 6h | 2017-12-27 09:00 A | 2017-12-28 11:00 A | 139, 52 | 100% |  |  |

| ID | WBS | Task | Duration | Start | Finish | Predecessors | Complete | Total float | Constraint |
| --- | --- | --- | --- | --- | --- | --- | --- | --- | --- |
| 141 |  | Cập nhật trạng thái | 4h | 2017-12-28 11:00 A | 2017-12-28 16:00 A | 140, 53 | 100% |  |  |
| 142 |  | Danh sách mẫu dự án/nhóm công việc | 1h | 2018-01-16 13:00 A | 2018-01-16 14:00 A | 54 | 100% |  | start no earlier than 2018-01-16 08:00 |
| 143 |  | Xem chi tiết mẫu dự án/nhóm công việc | 2h | 2018-01-16 14:00 A | 2018-01-16 16:00 | 142, 55 | 90% | -92.75d |  |
| 144 |  | Cập nhật mẫu dự án/nhóm công việc | 1h | 2018-01-16 16:00 A | 2018-01-16 17:00 A | 143, 56 | 100% |  |  |
| 145 |  | Danh sách dự án/nhóm công việc (Dạng List) | 1h | 2018-01-31 08:00 A | 2018-01-31 09:00 | 144, 57 | 95% | -103d | start no earlier than 2018-01-31 08:00 |
| 146 |  | Danh sách dự án/nhóm công việc (Dạng Kanban) | 6h | 2018-01-03 09:00 | 2018-01-03 16:00 | 128, 58 |  | -87.62d |  |
| 147 |  | Danh sách dự án/nhóm công việc (Dạng Gantt) | 6h | 2018-01-03 16:00 | 2018-01-04 14:00 | 146, 59 |  | -87.62d |  |
| 148 |  | Cập nhật dự án/nhóm công việc | 4h | 2018-01-31 09:00 A | 2018-02-01 09:00 | 145, 60 | 70% | -104.38d |  |
| 149 |  | Xem dự án/nhóm công việc | 3h | 2018-02-01 09:00 | 2018-02-01 12:00 | 148, 61 |  | -105.12d |  |
| 150 |  | Chọn hợp đồng | 2h | 2018-02-01 13:00 A | 2018-02-01 15:00 | 149, 62 | 95% | -105.12d |  |
| 151 |  | Chọn nhân sự | 2h | 2018-02-01 15:00 | 2018-02-01 17:00 | 150, 63 |  | -105.12d |  |
| 152 |  | Chọn phòng ban | 2h | 2018-02-02 08:00 | 2018-02-02 10:00 | 151, 64 |  | -105.12d |  |
| 153 | 1.4.4 | **Release 4** | 13.38d | 2017-12-21 11:00 | 2018-01-09 15:00 |  |  | -87.62d |  |
| 154 | 1.4.4.1 | **Quản lý công việc** | 13.38d | 2017-12-21 11:00 | 2018-01-09 15:00 |  |  | -87.62d |  |
| 155 |  | Danh sách công việc (Dạng List) | 1h | 2017-12-21 11:00 | 2017-12-21 12:00 | 67 |  | -87.62d | start no earlier than 2017-12-21 11:00 |
| 156 |  | Danh sách công việc (Dạng Kanban) | 4h | 2018-01-04 14:00 | 2018-01-05 09:00 | 68, 147 |  | -87.62d |  |
| 157 |  | Danh sách công việc (Dạng Lịch) | 2h | 2018-01-05 09:00 | 2018-01-05 11:00 | 156, 69 |  | -87.62d |  |
| 158 |  | Danh sách công việc (Dạng Gantt) | 4h | 2018-01-05 11:00 | 2018-01-05 16:00 | 157, 70 |  | -87.62d |  |
| 159 |  | Import công việc | 8h | 2017-12-21 13:00 | 2017-12-22 12:00 | 71, 155 |  | -87.62d |  |
| 160 |  | Cập nhật công việc | 4h | 2017-12-22 13:00 | 2017-12-22 17:00 | 72, 159 |  | -87.62d |  |
| 161 |  | Xem thông tin công việc | 3h | 2017-12-25 08:00 | 2017-12-25 11:00 | 73, 160 |  | -87.62d |  |
| 162 |  | Chọn công việc trước | 3h | 2017-12-25 11:00 | 2017-12-25 15:00 | 74, 161 |  | -87.62d |  |
| 163 |  | Nhập checklist công việc | 2h | 2017-12-25 15:00 | 2017-12-25 17:00 | 75, 162 |  | -87.62d |  |
| 164 |  | Cập nhật công việc hàng loạt | 3h | 2017-12-26 08:00 | 2017-12-26 11:00 | 76, 163 |  | -87.62d |  |
| 165 |  | Thiết kế Dasboard chung | 8h | 2018-01-08 15:00 | 2018-01-09 15:00 | 77, 168 |  | -87.62d |  |
| 166 |  | Thiết lập thời gian lặp lại | 4h | 2017-12-26 11:00 | 2017-12-26 16:00 | 78, 164 |  | -87.62d |  |
| 167 |  | Màn hình calendar hiển thị theo dạng lịch | 4h | 2018-01-05 16:00 | 2018-01-08 11:00 | 79, 158 |  | -87.62d |  |
| 168 |  | Màn hình calendar hiển thị theo dạng list | 3h | 2018-01-08 11:00 | 2018-01-08 15:00 | 80, 167 |  | -87.62d |  |
| 169 |  | Lập lịch | 6h | 2017-12-26 16:00 | 2017-12-27 14:00 | 81, 166 |  | -87.62d |  |
| 170 |  | Gửi mail (cho Nhân sự tham gia) -> gửi mail nội bộ | 2h | 2017-12-27 14:00 | 2017-12-27 16:00 | 82, 169 |  | -87.62d |  |
| 171 |  | Thiết lập gửi mail | 2h | 2017-12-27 16:00 | 2017-12-28 09:00 | 83, 170 |  | -87.62d |  |
| 172 |  | Thiết lập cảnh báo | 2h | 2017-12-28 09:00 | 2017-12-28 11:00 | 84, 171 |  | -87.62d |  |
| 173 |  | Focus sheet | 5h | 2017-12-28 11:00 | 2017-12-28 17:00 | 85, 172 |  | -87.62d |  |
| 174 |  | Báo cáo công việc theo dự án | 6h | 2017-12-29 08:00 | 2017-12-29 15:00 | 86, 173 |  | -87.62d |  |
| 175 |  | Báo cáo công việc theo nhân viên | 6h | 2017-12-29 15:00 | 2018-01-01 12:00 | 87, 174 |  | -87.62d |  |
| 176 |  | Development Completed | 0d | 2017-08-17 08:00 | 2017-08-17 08:00 |  |  | 21d |  |
| 177 | 1.6 | **Test** | 120.88d | 2017-08-23 09:00 | 2018-02-08 17:00 |  |  | -104d |  |
| 178 | 1.6.1 | **Release 1** | 0.59d | 2017-08-23 09:00 | 2017-08-23 14:45 | 90 |  | 16.28d |  |
| 179 | 1.6.1.1 | **Quản lý hoa hồng** | 0.59d | 2017-08-23 09:00 | 2017-08-23 14:45 |  |  | 16.28d |  |
| 180 |  | Cập nhật cửa hàng | 0.5h | 2017-08-23 09:00 | 2017-08-23 09:30 |  |  | 16.28d |  |
| 181 |  | Thiết lập thông tin công ty | 0.25h | 2017-08-23 09:30 | 2017-08-23 09:45 | 180 |  | 16.28d |  |
| 182 |  | Danh mục mức hoa hồng theo doanh thu lũy kế | 0.75h | 2017-08-23 09:45 | 2017-08-23 10:30 | 181 |  | 16.28d |  |
| 183 |  | Cập nhật mức hoa hồng theo doanh thu lũy kế | 0.75h | 2017-08-23 10:30 | 2017-08-23 11:15 | 182 |  | 16.28d |  |
| 184 |  | Xem chi tiết mức hoa hồng theo doanh thu lũy kế | 0.75h | 2017-08-23 11:15 | 2017-08-23 12:00 | 183 |  | 16.28d |  |
| 185 |  | Cập nhật hội viên | 0.25h | 2017-08-23 13:00 | 2017-08-23 13:15 | 184 |  | 16.28d |  |
| 186 |  | Sơ đồ cây nhân viên hưởng hoa hồng | 0.75h | 2017-08-23 09:00 | 2017-08-23 09:45 |  |  | 16.59d |  |
| 187 |  | Báo cáo chi tiết huê hồng từng nhân viên, nhập mã nhân viên để in báo cáo chi tiết | 0.75h | 2017-08-23 13:15 | 2017-08-23 14:00 | 185 |  | 16.28d |  |
| 188 |  | Báo cáo tổng hợp huê hồng từng nhân viên, nhập mã nhân viên để in báo cáo tổng hợp | 0.75h | 2017-08-23 14:00 | 2017-08-23 14:45 | 187 |  | 16.28d |  |
| 189 |  | Báo cáo chi tiết tất cả nhân viên hưởng huê hồng trong tháng | 0.75h | 2017-08-23 09:45 | 2017-08-23 10:30 | 186 |  | 16.59d |  |
| 190 |  | Báo cáo tổng hợp tất cả nhân viên hưởng huê hồng trong tháng | 0.75h | 2017-08-23 10:30 | 2017-08-23 11:15 | 189 |  | 16.59d |  |
| 191 | 1.6.2 | **Release 2** | 1.21d | 2017-10-04 11:30 | 2017-10-05 14:12 | 103 |  | -13.65d |  |
| 192 | 1.6.2.1 | **Gộp đối tượng khách hàng** | 0.12d | 2017-10-04 11:30 | 2017-10-04 13:30 |  |  | -13.65d |  |
| 193 |  | Danh mục khách hàng | 0.2h | 2017-10-04 11:30 | 2017-10-04 11:42 |  |  | -13.65d |  |
| 194 |  | Cập nhật khách hàng | 0.2h | 2017-10-04 11:42 | 2017-10-04 11:54 | 193 |  | -13.65d |  |
| 195 |  | Xem chi tiết khách hàng | 0.2h | 2017-10-04 11:54 | 2017-10-04 13:06 | 194 |  | -13.65d |  |
| 196 |  | In lịch sử thông tin khách hàng | 0.2h | 2017-10-04 13:06 | 2017-10-04 13:18 | 195 |  | -13.65d |  |
| 197 |  | Import khách hàng | 0.2h | 2017-10-04 13:18 | 2017-10-04 13:30 | 196 |  | -13.65d |  |
| 198 | 1.6.2.2 | **Call center** | 1.09d | 2017-10-04 13:30 | 2017-10-05 14:12 |  |  | -13.65d |  |
| 199 |  | Hỗ trợ | 0.1h | 2017-10-04 13:30 | 2017-10-04 13:36 | 197 |  | -13.65d |  |
| 200 |  | Gọi đến | 0.1h | 2017-10-04 13:36 | 2017-10-04 13:42 | 199 |  | -13.65d |  |
| 201 |  | Lịch sử cuộc gọi | 0.1h | 2017-10-04 13:42 | 2017-10-04 13:48 | 200 |  | -13.65d |  |
| 202 |  | Công nợ | 0.1h | 2017-10-04 13:48 | 2017-10-04 13:54 | 201 |  | -13.65d |  |
| 203 |  | Thêm nhanh khách hàng | 0.1h | 2017-10-04 13:54 | 2017-10-04 14:00 | 202 |  | -13.65d |  |
| 204 |  | Thêm nhanh đơn hàng | 0.1h | 2017-10-04 14:00 | 2017-10-04 14:06 | 203 |  | -13.65d |  |
| 205 |  | Chọn khách hàng | 0.1h | 2017-10-04 14:06 | 2017-10-04 14:12 | 204 |  | -13.65d |  |
| 206 |  | Xem nhanh công nợ | 8h | 2017-10-04 14:12 | 2017-10-05 14:12 | 205 |  | -13.65d |  |
| 207 | 1.6.3 | **Release 3** | 4.75d | 2018-02-02 10:00 | 2018-02-08 17:00 | 119 |  | -104d |  |
| 208 | 1.6.3.1 | **Quản lý công việc** | 4.75d | 2018-02-02 10:00 | 2018-02-08 17:00 |  |  | -104d |  |
| 209 |  | Thiết lập hệ thống | 1h | 2018-02-02 10:00 | 2018-02-02 11:00 |  |  | -104d |  |
| 210 |  | Danh mục thiết lập thời gian làm việc | 1h | 2018-02-02 11:00 | 2018-02-02 12:00 | 209 |  | -104d |  |

| ID | WBS | Task | Duration | Start | Finish | Predecessors | Total float | Constraint |
| --- | --- | --- | --- | --- | --- | --- | --- | --- |
| 211 |  | Xem chi tiết thời gian làm việc | 1h | 2018-02-02 13:00 | 2018-02-02 14:00 | 210 | -104d |  |
| 212 |  | Thiết lập thời gian làm việc | 1h | 2018-02-02 14:00 | 2018-02-02 15:00 | 211 | -104d |  |
| 213 |  | Sửa giao diện menu tổng | 1h | 2018-02-02 15:00 | 2018-02-02 16:00 | 212 | -104d |  |
| 214 |  | Điều kiện tìm kiếm động ở các màn hình tìm kiếm | 2h | 2018-02-02 16:00 | 2018-02-05 09:00 | 213 | -104d |  |
| 215 |  | Group dữ liệu theo ý người dùng khi hiển thị dạng list | 2h | 2018-02-05 09:00 | 2018-02-05 11:00 | 214 | -104d |  |
| 216 |  | Thông báo | 2h | 2018-02-05 11:00 | 2018-02-05 14:00 | 215 | -104d |  |
| 217 |  | Danh mục thông báo | 1h | 2018-02-05 14:00 | 2018-02-05 15:00 | 216 | -104d |  |
| 218 |  | Cập nhật thông báo | 1h | 2018-02-05 15:00 | 2018-02-05 16:00 | 217 | -104d |  |
| 219 |  | Xem thông báo | 1h | 2018-02-05 16:00 | 2018-02-05 17:00 | 218 | -104d |  |
| 220 |  | Danh mục quy trình | 1h | 2018-02-06 08:00 | 2018-02-06 09:00 | 219 | -104d |  |
| 221 |  | Xem chi tiết quy trình | 1h | 2018-02-06 09:00 | 2018-02-06 10:00 | 220 | -104d |  |
| 222 |  | Cập nhật quy trình | 1h | 2018-02-06 10:00 | 2018-02-06 11:00 | 221 | -104d |  |
| 223 |  | Danh mục bước | 1h | 2018-02-06 11:00 | 2018-02-06 12:00 | 222 | -104d |  |
| 224 |  | Xem chi tiết bước | 1h | 2018-02-06 13:00 | 2018-02-06 14:00 | 223 | -104d |  |
| 225 |  | Cập nhật bước | 1h | 2018-02-06 14:00 | 2018-02-06 15:00 | 224 | -104d |  |
| 226 |  | Cập nhật mẫu công việc theo bước | 1h | 2018-02-06 15:00 | 2018-02-06 16:00 | 225 | -104d |  |
| 227 |  | Danh mục trạng thái | 1h | 2018-02-06 16:00 | 2018-02-06 17:00 | 226 | -104d |  |
| 228 |  | Xem chi tiết trạng thái | 1h | 2018-02-07 08:00 | 2018-02-07 09:00 | 227 | -104d |  |
| 229 |  | Cập nhật trạng thái | 1h | 2018-02-07 09:00 | 2018-02-07 10:00 | 228 | -104d |  |
| 230 |  | Danh sách mẫu dự án/nhóm công việc | 1h | 2018-02-07 10:00 | 2018-02-07 11:00 | 229 | -104d |  |
| 231 |  | Xem chi tiết mẫu dự án/nhóm công việc | 1h | 2018-02-07 11:00 | 2018-02-07 12:00 | 230 | -104d |  |
| 232 |  | Cập nhật mẫu dự án/nhóm công việc | 2h | 2018-02-07 13:00 | 2018-02-07 15:00 | 231 | -104d |  |
| 233 |  | Danh sách dự án/nhóm công việc (Dạng List) | 1h | 2018-02-07 15:00 | 2018-02-07 16:00 | 232 | -104d |  |
| 234 |  | Danh sách dự án/nhóm công việc (Dạng Kanban) | 2h | 2018-02-07 16:00 | 2018-02-08 09:00 | 233 | -104d |  |
| 235 |  | Danh sách dự án/nhóm công việc (Dạng Gantt) | 2h | 2018-02-08 09:00 | 2018-02-08 11:00 | 234 | -104d |  |
| 236 |  | Cập nhật dự án/nhóm công việc | 1h | 2018-02-08 11:00 | 2018-02-08 12:00 | 235 | -104d |  |
| 237 |  | Xem dự án/nhóm công việc | 1h | 2018-02-08 13:00 | 2018-02-08 14:00 | 236 | -104d |  |
| 238 |  | Chọn hợp đồng | 1h | 2018-02-08 14:00 | 2018-02-08 15:00 | 237 | -104d |  |
| 239 |  | Chọn nhân sự | 1h | 2018-02-08 15:00 | 2018-02-08 16:00 | 238 | -104d |  |
| 240 |  | Chọn phòng ban | 1h | 2018-02-08 16:00 | 2018-02-08 17:00 | 239 | -104d |  |
| 241 | 1.6.4 | **Release 4** | 4.5d | 2018-01-09 15:00 | 2018-01-16 10:00 | 153 | -86.25d |  |
| 242 | 1.6.4.1 | **Quản lý công việc** | 4.5d | 2018-01-09 15:00 | 2018-01-16 10:00 |  | -86.25d |  |
| 243 |  | Danh sách công việc (Dạng List) | 1h | 2018-01-09 15:00 | 2018-01-09 16:00 | 87 | -86.25d |  |
| 244 |  | Danh sách công việc (Dạng Kanban) | 1h | 2018-01-09 16:00 | 2018-01-09 17:00 | 243 | -86.25d |  |
| 245 |  | Danh sách công việc (Dạng Lịch) | 1h | 2018-01-10 08:00 | 2018-01-10 09:00 | 244 | -86.25d |  |
| 246 |  | Danh sách công việc (Dạng Gantt) | 1h | 2018-01-10 09:00 | 2018-01-10 10:00 | 245 | -86.25d |  |
| 247 |  | Import công việc | 4h | 2018-01-10 10:00 | 2018-01-10 15:00 | 246 | -86.25d |  |
| 248 |  | Cập nhật công việc | 2h | 2018-01-10 15:00 | 2018-01-10 17:00 | 247 | -86.25d |  |
| 249 |  | Xem thông tin công việc | 2h | 2018-01-11 08:00 | 2018-01-11 10:00 | 248 | -86.25d |  |
| 250 |  | Chọn công việc trước | 2h | 2018-01-11 10:00 | 2018-01-11 12:00 | 249 | -86.25d |  |
| 251 |  | Nhập checklist công việc | 1h | 2018-01-11 13:00 | 2018-01-11 14:00 | 250 | -86.25d |  |
| 252 |  | Cập nhật công việc hàng loạt | 2h | 2018-01-11 14:00 | 2018-01-11 16:00 | 251 | -86.25d |  |
| 253 |  | Thiết kế Dasboard chung | 3h | 2018-01-11 16:00 | 2018-01-12 10:00 | 252 | -86.25d |  |
| 254 |  | Thiết lập thời gian lặp lại | 1h | 2018-01-12 10:00 | 2018-01-12 11:00 | 253 | -86.25d |  |
| 255 |  | Màn hình calendar hiển thị theo dạng lịch | 2h | 2018-01-12 11:00 | 2018-01-12 14:00 | 254 | -86.25d |  |
| 256 |  | Màn hình calendar hiển thị theo dạng list | 2h | 2018-01-12 14:00 | 2018-01-12 16:00 | 255 | -86.25d |  |
| 257 |  | Lập lịch | 2h | 2018-01-12 16:00 | 2018-01-15 09:00 | 256 | -86.25d |  |
| 258 |  | Gửi mail (cho Nhân sự tham gia) -> gửi mail nội bộ | 1h | 2018-01-15 09:00 | 2018-01-15 10:00 | 257 | -86.25d |  |
| 259 |  | Thiết lập gửi mail | 1h | 2018-01-15 10:00 | 2018-01-15 11:00 | 258 | -86.25d |  |
| 260 |  | Thiết lập cảnh báo | 1h | 2018-01-15 11:00 | 2018-01-15 12:00 | 259 | -86.25d |  |
| 261 |  | Focus sheet | 2h | 2018-01-15 13:00 | 2018-01-15 15:00 | 260 | -86.25d |  |
| 262 |  | Báo cáo công việc theo dự án | 2h | 2018-01-15 15:00 | 2018-01-15 17:00 | 261 | -86.25d |  |
| 263 |  | Báo cáo công việc theo nhân viên | 2h | 2018-01-16 08:00 | 2018-01-16 10:00 | 262 | -86.25d |  |
| 264 |  | Test Completed | 0d | 2017-08-17 08:00 | 2017-08-17 08:00 |  | 21d |  |
| 265 | 1.8 | **Fix bug** | 122d | 2017-08-23 09:00 | 2018-02-12 09:00 |  | -105.12d |  |
| 266 | 1.8.1 | **Release 1** | 0.53d | 2017-08-23 09:00 | 2017-08-23 14:15 | 90 | 0.34d | finish no later than 2017-08-23 17:00 |
| 267 | 1.8.1.1 | **Quản lý hoa hồng** | 0.53d | 2017-08-23 09:00 | 2017-08-23 14:15 |  | 0.34d |  |
| 268 |  | Cập nhật cửa hàng | 0.5h | 2017-08-23 09:00 | 2017-08-23 09:30 |  | 0.53d |  |
| 269 |  | Thiết lập thông tin công ty | 0.25h | 2017-08-23 09:00 | 2017-08-23 09:15 |  | 0.34d |  |
| 270 |  | Danh mục mức hoa hồng theo doanh thu lũy kế | 0.75h | 2017-08-23 09:15 | 2017-08-23 10:00 | 269 | 0.34d |  |
| 271 |  | Cập nhật mức hoa hồng theo doanh thu lũy kế | 0.75h | 2017-08-23 10:00 | 2017-08-23 10:45 | 270 | 0.34d |  |
| 272 |  | Xem chi tiết mức hoa hồng theo doanh thu lũy kế | 0.75h | 2017-08-23 10:45 | 2017-08-23 11:30 | 271 | 0.34d |  |
| 273 |  | Cập nhật hội viên | 0.25h | 2017-08-23 11:30 | 2017-08-23 11:45 | 272 | 0.34d |  |
| 274 |  | Sơ đồ cây nhân viên hưởng hoa hồng | 0.75h | 2017-08-23 09:30 | 2017-08-23 10:15 | 268 | 0.53d |  |
| 275 |  | Báo cáo chi tiết huê hồng từng nhân viên, nhập mã nhân viên để in báo cáo chi tiết | 0.75h | 2017-08-23 10:15 | 2017-08-23 11:00 | 274 | 0.53d |  |
| 276 |  | Báo cáo tổng hợp huê hồng từng nhân viên, nhập mã nhân viên để in báo cáo tổng hợp | 0.75h | 2017-08-23 11:00 | 2017-08-23 11:45 | 275 | 0.53d |  |
| 277 |  | Báo cáo chi tiết tất cả nhân viên hưởng huê hồng trong tháng | 0.75h | 2017-08-23 11:45 | 2017-08-23 13:30 | 273 | 0.34d |  |
| 278 |  | Báo cáo tổng hợp tất cả nhân viên hưởng huê hồng trong tháng | 0.75h | 2017-08-23 13:30 | 2017-08-23 14:15 | 277 | 0.34d |  |
| 279 | 1.8.2 | **Release 2** | 0.23d | 2017-10-04 11:30 | 2017-10-04 14:18 | 103 | -12.66d |  |
| 280 | 1.8.2.1 | **Gộp đối tượng khách hàng** | 0.12d | 2017-10-04 11:30 | 2017-10-04 13:30 |  | -12.66d |  |

| ID | WBS | Task | Duration | Start | Finish | Predecessors | Total float |
| --- | --- | --- | --- | --- | --- | --- | --- |
| 281 |  | Danh mục khách hàng | 0.2h | 2017-10-04 11:30 | 2017-10-04 11:42 |  | -12.66d |
| 282 |  | Cập nhật khách hàng | 0.2h | 2017-10-04 11:42 | 2017-10-04 11:54 | 281 | -12.66d |
| 283 |  | Xem chi tiết khách hàng | 0.2h | 2017-10-04 11:54 | 2017-10-04 13:06 | 282 | -12.66d |
| 284 |  | In lịch sử thông tin khách hàng | 0.2h | 2017-10-04 13:06 | 2017-10-04 13:18 | 283 | -12.66d |
| 285 |  | Import khách hàng | 0.2h | 2017-10-04 13:18 | 2017-10-04 13:30 | 284 | -12.66d |
| 286 | 1.8.2.2 | **Call center** | 0.1d | 2017-10-04 13:30 | 2017-10-04 14:18 |  | -12.66d |
| 287 |  | Hỗ trợ | 0.1h | 2017-10-04 13:30 | 2017-10-04 13:36 | 285 | -12.66d |
| 288 |  | Gọi đến | 0.1h | 2017-10-04 13:36 | 2017-10-04 13:42 | 287 | -12.66d |
| 289 |  | Lịch sử cuộc gọi | 0.1h | 2017-10-04 13:42 | 2017-10-04 13:48 | 288 | -12.66d |
| 290 |  | Công nợ | 0.1h | 2017-10-04 13:48 | 2017-10-04 13:54 | 289 | -12.66d |
| 291 |  | Thêm nhanh khách hàng | 0.1h | 2017-10-04 13:54 | 2017-10-04 14:00 | 290 | -12.66d |
| 292 |  | Thêm nhanh đơn hàng | 0.1h | 2017-10-04 14:00 | 2017-10-04 14:06 | 291 | -12.66d |
| 293 |  | Chọn khách hàng | 0.1h | 2017-10-04 14:06 | 2017-10-04 14:12 | 292 | -12.66d |
| 294 |  | Xem nhanh công nợ | 0.1h | 2017-10-04 14:12 | 2017-10-04 14:18 | 293 | -12.66d |
| 295 | 1.8.3 | **Release 3** | 4d | 2018-02-02 10:00 | 2018-02-08 10:00 | 119 | -105.12d |
| 296 | 1.8.3.1 | **Quản lý công việc** | 4d | 2018-02-02 10:00 | 2018-02-08 10:00 |  | -105.12d |
| 297 |  | Danh mục thiết lập thời gian làm việc | 1h | 2018-02-02 10:00 | 2018-02-02 11:00 |  | -99.62d |
| 298 |  | Xem chi tiết thời gian làm việc | 1h | 2018-02-02 11:00 | 2018-02-02 12:00 | 297 | -99.62d |
| 299 |  | Thiết lập thời gian làm việc | 1h | 2018-02-02 13:00 | 2018-02-02 14:00 | 298 | -99.62d |
| 300 |  | Thiết lập hệ thống | 1h | 2018-02-02 10:00 | 2018-02-02 11:00 |  | -102.75d |
| 301 |  | Sửa giao diện menu tổng | 1h | 2018-02-02 10:00 | 2018-02-02 11:00 | 165 | -105.12d |
| 302 |  | Điều kiện tìm kiếm động ở các màn hình tìm kiếm | 2h | 2018-02-02 11:00 | 2018-02-02 14:00 | 301 | -105.12d |
| 303 |  | Group dữ liệu theo ý người dùng khi hiển thị dạng list | 2h | 2018-02-02 14:00 | 2018-02-02 16:00 | 302 | -105.12d |
| 304 |  | Thông báo | 2h | 2018-02-02 16:00 | 2018-02-05 09:00 | 303 | -105.12d |
| 305 |  | Danh mục thông báo | 1h | 2018-02-02 11:00 | 2018-02-02 12:00 | 300 | -102.75d |
| 306 |  | Cập nhật thông báo | 1h | 2018-02-02 13:00 | 2018-02-02 14:00 | 305 | -102.75d |
| 307 |  | Xem thông báo | 1h | 2018-02-02 14:00 | 2018-02-02 15:00 | 306 | -102.75d |
| 308 |  | Danh mục quy trình | 1h | 2018-02-02 15:00 | 2018-02-02 16:00 | 307 | -102.75d |
| 309 |  | Xem chi tiết quy trình | 1h | 2018-02-02 16:00 | 2018-02-02 17:00 | 308 | -102.75d |
| 310 |  | Cập nhật quy trình | 1h | 2018-02-05 08:00 | 2018-02-05 09:00 | 309 | -102.75d |
| 311 |  | Danh mục bước | 1h | 2018-02-05 09:00 | 2018-02-05 10:00 | 310 | -102.75d |
| 312 |  | Xem chi tiết bước | 1h | 2018-02-05 10:00 | 2018-02-05 11:00 | 311 | -102.25d |
| 313 |  | Cập nhật bước | 1h | 2018-02-05 11:00 | 2018-02-05 12:00 | 312 | -102.25d |
| 314 |  | Cập nhật mẫu công việc theo bước | 1h | 2018-02-05 13:00 | 2018-02-05 14:00 | 313 | -102.25d |
| 315 |  | Danh mục trạng thái | 1h | 2018-02-05 14:00 | 2018-02-05 15:00 | 314 | -102.25d |
| 316 |  | Xem chi tiết trạng thái | 1h | 2018-02-05 15:00 | 2018-02-05 16:00 | 315 | -102.25d |
| 317 |  | Cập nhật trạng thái | 1h | 2018-02-05 16:00 | 2018-02-05 17:00 | 316 | -102.25d |
| 318 |  | Danh sách mẫu dự án/nhóm công việc | 1h | 2018-02-06 13:00 | 2018-02-06 14:00 | 317 | -102.75d |
| 319 |  | Xem chi tiết mẫu dự án/nhóm công việc | 1h | 2018-02-06 14:00 | 2018-02-06 15:00 | 318 | -102.75d |
| 320 |  | Cập nhật mẫu dự án/nhóm công việc | 2h | 2018-02-06 15:00 | 2018-02-06 17:00 | 319 | -102.75d |
| 321 |  | Danh sách dự án/nhóm công việc (Dạng List) | 1h | 2018-02-07 08:00 | 2018-02-07 09:00 | 320 | -102.75d |
| 322 |  | Danh sách dự án/nhóm công việc (Dạng Kanban) | 2h | 2018-02-05 09:00 | 2018-02-05 11:00 | 304 | -105.12d |
| 323 |  | Danh sách dự án/nhóm công việc (Dạng Gantt) | 2h | 2018-02-05 11:00 | 2018-02-05 14:00 | 322 | -105.12d |
| 324 |  | Cập nhật dự án/nhóm công việc | 1h | 2018-02-07 09:00 | 2018-02-07 10:00 | 321 | -102.75d |
| 325 |  | Xem dự án/nhóm công việc | 1h | 2018-02-07 10:00 | 2018-02-07 11:00 | 324 | -102.75d |
| 326 |  | Chọn hợp đồng | 1h | 2018-02-07 11:00 | 2018-02-07 12:00 | 325 | -102.75d |
| 327 |  | Chọn nhân sự | 1h | 2018-02-08 08:00 | 2018-02-08 09:00 | 326 | -103.25d |
| 328 |  | Chọn phòng ban | 1h | 2018-02-08 09:00 | 2018-02-08 10:00 | 327 | -103.25d |
| 329 | 1.8.4 | **Release 4** | 4.5d | 2018-02-05 14:00 | 2018-02-12 09:00 | 153 | -105.12d |
| 330 | 1.8.4.1 | **Quản lý công việc** | 4.5d | 2018-02-05 14:00 | 2018-02-12 09:00 |  | -105.12d |
| 331 |  | Danh sách công việc (Dạng List) | 1h | 2018-02-05 14:00 | 2018-02-05 15:00 | 323 | -105.12d |
| 332 |  | Danh sách công việc (Dạng Kanban) | 1h | 2018-02-05 15:00 | 2018-02-05 16:00 | 331 | -105.12d |
| 333 |  | Danh sách công việc (Dạng Lịch) | 1h | 2018-02-05 16:00 | 2018-02-05 17:00 | 332 | -105.12d |
| 334 |  | Danh sách công việc (Dạng Gantt) | 1h | 2018-02-06 08:00 | 2018-02-06 09:00 | 333 | -105.12d |
| 335 |  | Import công việc | 4h | 2018-02-06 09:00 | 2018-02-06 14:00 | 334 | -105.12d |
| 336 |  | Cập nhật công việc | 2h | 2018-02-06 14:00 | 2018-02-06 16:00 | 335 | -105.12d |
| 337 |  | Xem thông tin công việc | 2h | 2018-02-06 16:00 | 2018-02-07 09:00 | 336 | -105.12d |
| 338 |  | Chọn công việc trước | 2h | 2018-02-07 09:00 | 2018-02-07 11:00 | 337 | -105.12d |
| 339 |  | Nhập checklist công việc | 1h | 2018-02-07 11:00 | 2018-02-07 12:00 | 338 | -105.12d |
| 340 |  | Cập nhật công việc hàng loạt | 2h | 2018-02-07 13:00 | 2018-02-07 15:00 | 339 | -105.12d |
| 341 |  | Thiết kế Dasboard chung | 3h | 2018-02-07 15:00 | 2018-02-08 09:00 | 340 | -105.12d |
| 342 |  | Thiết lập thời gian lặp lại | 1h | 2018-02-08 09:00 | 2018-02-08 10:00 | 341 | -105.12d |
| 343 |  | Màn hình calendar hiển thị theo dạng lịch | 2h | 2018-02-08 10:00 | 2018-02-08 12:00 | 342 | -105.12d |
| 344 |  | Màn hình calendar hiển thị theo dạng list | 2h | 2018-02-08 13:00 | 2018-02-08 15:00 | 343 | -105.12d |
| 345 |  | Lập lịch | 2h | 2018-02-08 15:00 | 2018-02-08 17:00 | 344 | -105.12d |
| 346 |  | Gửi mail (cho Nhân sự tham gia) -> gửi mail nội bộ | 1h | 2018-02-09 08:00 | 2018-02-09 09:00 | 345 | -105.12d |
| 347 |  | Thiết lập gửi mail | 1h | 2018-02-09 09:00 | 2018-02-09 10:00 | 346 | -105.12d |
| 348 |  | Thiết lập cảnh báo | 1h | 2018-02-09 10:00 | 2018-02-09 11:00 | 347 | -105.12d |
| 349 |  | Focus sheet | 2h | 2018-02-09 11:00 | 2018-02-09 14:00 | 348 | -105.12d |
| 350 |  | Báo cáo công việc theo dự án | 2h | 2018-02-09 14:00 | 2018-02-09 16:00 | 349 | -105.12d |

| ID | Task | Duration | Start | Finish | Predecessors | Total float |
| --- | --- | --- | --- | --- | --- | --- |
| 351 | Báo cáo công việc theo nhân viên | 2h | 2018-02-09 16:00 | 2018-02-12 09:00 | 350 | -105.12d |
| 352 | Fix bug Completed | 0d | 2017-08-17 08:00 | 2017-08-17 08:00 |  | 21d |
| 353 | Release đợt 1 | 0h | 2017-08-23 14:15 | 2017-08-23 14:15 | 266 | 16.34d |
| 354 | Release đợt 2 | 0h | 2017-10-04 14:18 | 2017-10-04 14:18 | 279 | -12.66d |
| 355 | Release đợt 3 | 0h | 2017-08-17 08:00 | 2017-08-17 08:00 |  | 21d |

## Version 2 (data date 2017-10-10, saved 2018-02-09)

Note of the change: Commit tiến độ KIMYEN

Last finish stays 2018-02-12. Complete tasks 81 → 82.

Changed:

| ID | Task | Start | Finish | Complete | Total float |
| --- | --- | --- | --- | --- | --- |
| 1 | **KIM YẾN** |  |  | 40% → 41% | -6.38d → -5.88d |
| 89 | **Development** |  |  | 44% → 46% | -0.5d → 0d |
| 119 | **Release 3** |  |  | 66% → 69% | -0.5d → 0d |
| 120 | **Quản lý công việc** |  |  | 66% → 69% | -0.5d → 0d |
| 148 | Cập nhật dự án/nhóm công việc |  |  | 70% → 85% | -104.38d → -104d |
| 149 | Xem dự án/nhóm công việc | 2018-02-01 09:00 A |  | 0% → 70% | -105.12d → -104.38d |
| 152 | Chọn phòng ban | 2018-02-02 08:00 A | 2018-02-02 10:00 A | 0% → 100% | -105.12d → none |

## Version 3 (data date 2017-10-10, saved 2018-02-24)

Note of the change: Thanh Lam - Update tiến độ KIMYEN 24/02/2018

Last finish stays 2018-02-12. Complete tasks 82 → 86.

Changed:

| ID | Task | Start | Finish | Complete | Total float |
| --- | --- | --- | --- | --- | --- |
| 89 | **Development** |  |  | 46% → 47% |  |
| 119 | **Release 3** |  |  | 69% → 71% |  |
| 120 | **Quản lý công việc** |  |  | 69% → 71% |  |
| 145 | Danh sách dự án/nhóm công việc (Dạng List) |  | 2018-01-31 09:00 A | 95% → 100% | -103d → none |
| 148 | Cập nhật dự án/nhóm công việc |  | 2018-02-01 09:00 A | 85% → 100% | -104d → none |
| 150 | Chọn hợp đồng |  | 2018-02-01 15:00 A | 95% → 100% | -105.12d → none |
| 151 | Chọn nhân sự | 2018-02-01 15:00 A | 2018-02-01 17:00 A | 0% → 100% | -105.12d → none |

## Version 4 (data date 2017-10-10, saved 2018-03-03)

Note of the change: Thanh Lam-Tiến độ Kim Yến

Last finish stays 2018-02-12.

Changed:

| ID | Task | Complete |
| --- | --- | --- |
| 149 | Xem dự án/nhóm công việc | 70% → 80% |
