# [ASOFT-CRM]_Implementation_Shedule

How a schedule from MS Project changed from version to version. A marks actual dates.

## Version 1 (data date 2018-02-07, saved 2018-02-26)

| ID | WBS | Task | Duration | Start | Finish | Predecessors | Complete | Total float | Constraint |
| --- | --- | --- | --- | --- | --- | --- | --- | --- | --- |
| 1 | 1 | **ASOFT-CRM** | 30.9d | 2018-01-24 08:00 A | 2018-03-16 16:12 |  | 15% | -22.4d | finish no later than 2017-12-13 17:00 |
| 2 | 1.1 | **Analysis** | 20.5d | 2018-01-24 08:00 A | 2018-03-02 12:00 |  | 29% | -12d |  |
| 3 | 1.1.1 | **Yêu cầu** | 17.5d | 2018-01-24 08:00 A | 2018-02-27 12:00 |  | 77% | -10.25d |  |
| 4 |  | Bổ sung lấy mã phân tích dự án để bổ sung chọn dự án. | 8h | 2018-01-24 08:00 A | 2018-01-24 17:00 A |  | 100% |  |  |
| 5 |  | Bổ sung cho phép chọn 1 or nhiều liên hệ của khách hàng | 8h | 2018-01-25 08:00 A | 2018-01-25 17:00 A | 4 | 100% |  |  |
| 6 |  | BS thiết lập chọn MPT dự án để gọi lên combobox | 8h | 2018-01-26 08:00 A | 2018-01-26 17:00 A | 5 | 100% |  |  |
| 7 |  | Sửa nghiệp vụ [Yêu cầu]: bổ sung thêm các thông tin yêu cầu nếu chưa có, thêm phân loại cần thiết | 10h | 2018-01-29 08:00 A | 2018-01-30 10:00 A | 6 | 100% |  |  |
| 8 |  | Bổ sung chức năng [Follow] | 12h | 2018-02-26 08:00 | 2018-02-27 12:00 |  |  | -56.34d | start no earlier than 2018-02-26 08:00 |
| 9 |  | Bổ sung xử lý Add task và bắn qua QLCV | 4h | 2018-01-30 10:00 | 2018-01-30 15:00 | 7 |  | -45.15d |  |
| 10 |  | Nếu trạng thái là complain sẽ gửi email cho danh sách follower | 4h | 2018-01-30 15:00 A | 2018-01-31 10:00 A | 9 | 100% |  |  |
| 11 |  | Bổ sung xuất excel màn hình [Yêu cầu] | 4h | 2018-01-31 10:00 A | 2018-01-31 15:00 A | 10 | 100% |  |  |
| 12 |  | Gửi mail cho khách hàng khi hoàn tất yêu cầu của khách hàng kèm theo link đánh giá (theo mẫu) | 8h | 2018-01-31 15:00 A | 2018-02-01 15:00 A | 11 | 100% |  |  |
| 13 |  | Màn hình khách hàng đánh giá | 4h | 2018-02-01 15:00 A | 2018-02-02 10:00 A | 12 | 100% |  |  |
| 14 | 1.1.2 | **Đơn hàng bán** | 2.25d | 2018-02-02 10:00 A | 2018-02-06 12:00 |  | 11% | -1d |  |
| 15 |  | Màn hình [Đơn hàng bán] bổ sung phân loại (Hợp đồng và đơn hàng) để quản lý | 8h | 2018-02-02 10:00 | 2018-02-05 10:00 | 13 |  | -47.46d |  |
| 16 |  | Tạo bảng quản lý Hợp đồng riêng tách với [Đơn hàng bán] | 2h | 2018-02-05 10:00 A | 2018-02-05 12:00 A | 15 | 100% |  |  |
| 17 |  | Đính MPT để quản lý mã số hợp đồng. | 8h | 2018-02-05 13:00 | 2018-02-06 12:00 | 16 |  | -52.84d |  |
| 18 | 1.1.3 | **Others** | 11d | 2018-02-06 13:00 | 2018-03-02 12:00 |  |  | -56.34d |  |
| 19 |  | Bổ sung chức năng duyệt | 24h | 2018-02-27 13:00 | 2018-03-02 12:00 | 8 |  | -56.34d |  |
| 20 |  | Bổ sung lấy địa chỉ email của khách hàng khi gửi mail | 1h | 2018-02-06 13:00 | 2018-02-06 14:00 | 17 |  | -52.84d |  |
| 21 |  | Bổ sung hiển thị thông tin cơ hội khi tạo phiếu báo giá | 2h | 2018-02-06 14:00 | 2018-02-06 16:00 | 20 |  | -52.84d |  |
| 22 |  | Sử dụng mã phân tích đối tượng CI để đưa vào CRM | 8h | 2018-02-06 16:00 | 2018-02-07 16:00 | 21 |  | -52.84d |  |
| 23 |  | Bổ sung hiển thị cột tổng tiền lên lưới tìm kiếm | 4h | 2018-02-07 16:00 | 2018-02-08 11:00 | 22 |  | -52.84d |  |
| 24 |  | Tích hợp xử lý tổng đài qua CRM | 8h | 2018-02-08 11:00 | 2018-02-09 11:00 | 23 |  | -52.84d |  |
| 25 |  | Sử dụng MPT Object để PL nhóm KH ABCD, nhóm dịch vụ KH đang sử dụng | 6h | 2018-02-09 11:00 | 2018-02-21 09:00 | 24 |  | -52.84d |  |
| 26 |  | Lưu điểm phản hồi của khách hàng khi KH đánh giá. | 1h | 2018-02-21 09:00 | 2018-02-21 10:00 | 25 |  | -52.84d |  |
| 27 | 1.1.4 | **Báo cáo** | 6d | 2018-02-21 10:00 | 2018-03-01 10:00 |  |  | -52.84d |  |
| 28 |  | Báo cáo thời gian xử lý 1 lỗi, yêu cầu hoặc nhiều từ dự án ( thời gian CON nhập yêu cầu, thời gian SOF phản hồi deadline, thời gian SOF xử lý, thời gian CON xử lý hoàn tất yêu câu) | 8h | 2018-02-21 10:00 | 2018-02-22 10:00 | 26 |  | -52.84d |  |
| 29 |  | Báo cáo thống kê kết quả CON kiểm tra 1 vấn đề sau khi SOF phản hồi xử lý hoàn tất | 8h | 2018-02-22 10:00 | 2018-02-23 10:00 | 28 |  | -52.84d |  |
| 30 |  | Báo cáo so sánh cơ hội tuần này với tuần trước, kỳ này và kỳ trước...: số lượng, giá trị,… | 8h | 2018-02-23 10:00 | 2018-02-26 10:00 | 29 |  | -52.84d |  |
| 31 |  | Báo cáo chi tiết kết quả thực hiện chiến dịch hàng tuần, hàng tháng,… theo nhân viên. | 8h | 2018-02-26 10:00 | 2018-02-27 10:00 | 30 |  | -52.84d |  |
| 32 |  | Báo cáo các HelpDesk reopen, ghi nhân thông tin reopen bao nhiêu lần, nôi dung từng lần reopen | 8h | 2018-02-27 10:00 | 2018-02-28 10:00 | 31 |  | -52.84d |  |
| 33 |  | Báo cáo tổng thời gian đã xử lý HelpDesk theo nhân viên | 8h | 2018-02-28 10:00 | 2018-03-01 10:00 | 32 |  | -52.84d |  |
| 34 |  | Analysis Completed | 0d | 2018-03-02 12:00 | 2018-03-02 12:00 | 18 |  | -49.5d |  |
| 35 | 1.3 | **Development** | 9.56d | 2018-02-27 13:00 | 2018-03-13 08:30 |  |  | -59.9d |  |
| 36 | 1.3.1 | **Yêu cầu** | 3.19d | 2018-02-27 13:00 | 2018-03-02 14:30 |  |  | -58.34d |  |
| 37 |  | Bổ sung lấy mã phân tích dự án để bổ sung chọn dự án. | 0.5h | 2018-03-01 08:30 | 2018-03-01 09:00 | 4 |  | -59.9d | start no earlier than 2018-03-01 08:30 |
| 38 |  | Bổ sung cho phép chọn 1 or nhiều liên hệ của khách hàng | 0.5h | 2018-03-01 09:00 | 2018-03-01 09:30 | 5, 37 |  | -59.9d |  |
| 39 |  | BS thiết lập chọn MPT dự án để gọi lên combobox | 0.5h | 2018-03-01 09:30 | 2018-03-01 10:00 | 6, 38 |  | -59.9d |  |
| 40 |  | Sửa nghiệp vụ [Yêu cầu]: bổ sung thêm các thông tin yêu cầu nếu chưa có, thêm phân loại cần thiết | 2h | 2018-03-01 10:00 | 2018-03-01 12:00 | 7, 39 |  | -59.9d |  |
| 41 |  | Bổ sung chức năng [Follow] | 12h | 2018-02-27 13:00 | 2018-02-28 17:00 | 8 |  | -54.84d |  |
| 42 |  | Bổ sung xử lý Add task và bắn qua QLCV | 1.5h | 2018-03-01 13:00 | 2018-03-01 14:30 | 9, 40 |  | -59.9d |  |
| 43 |  | Nếu trạng thái là complain sẽ gửi email cho danh sách follower | 1h | 2018-03-01 14:30 | 2018-03-01 15:30 | 10, 42 |  | -59.9d |  |
| 44 |  | Bổ sung xuất excel màn hình [Yêu cầu] | 1h | 2018-03-01 15:30 | 2018-03-01 16:30 | 11, 43 |  | -59.9d |  |
| 45 |  | Gửi mail cho khách hàng khi hoàn tất yêu cầu của khách hàng kèm theo link đánh giá (theo mẫu) | 1h | 2018-03-01 16:30 | 2018-03-02 08:30 | 12, 44 |  | -59.9d |  |
| 46 |  | Màn hình khách hàng đánh giá | 5h | 2018-03-02 08:30 | 2018-03-02 14:30 | 13, 45 |  | -59.9d |  |
| 47 | 1.3.2 | **Đơn hàng bán** | 0.38d | 2018-03-02 14:30 | 2018-03-05 08:30 |  |  | -59.9d |  |
| 48 |  | Màn hình [Đơn hàng bán] bổ sung phân loại (Hợp đồng và đơn hàng) để quản lý | 0.5h | 2018-03-02 14:30 | 2018-03-02 15:00 | 15, 46 |  | -59.9d |  |
| 49 |  | Tạo bảng quản lý Hợp đồng riêng tách với [Đơn hàng bán] | 2h | 2018-03-02 15:00 | 2018-03-02 17:00 | 16, 48 |  | -59.9d |  |
| 50 |  | Đính MPT để quản lý mã số hợp đồng. | 0.5h | 2018-03-05 08:00 | 2018-03-05 08:30 | 17, 49 |  | -59.9d |  |
| 51 | 1.3.3 | **Others** | 3d | 2018-03-02 13:00 | 2018-03-07 12:00 |  |  | -59.34d |  |
| 52 |  | Bổ sung chức năng duyệt | 24h | 2018-03-02 13:00 | 2018-03-07 12:00 | 19, 41 |  | -56.34d |  |
| 53 |  | Bổ sung lấy địa chỉ email của khách hàng khi gửi mail | 1h | 2018-03-05 08:30 | 2018-03-05 09:30 | 20, 50 |  | -59.9d |  |
| 54 |  | Bổ sung hiển thị thông tin cơ hội khi tạo phiếu báo giá | 1h | 2018-03-05 09:30 | 2018-03-05 10:30 | 21, 53 |  | -59.9d |  |
| 55 |  | Sử dụng mã phân tích đối tượng CI để đưa vào CRM | 1h | 2018-03-05 10:30 | 2018-03-05 11:30 | 22, 54 |  | -59.9d |  |
| 56 |  | Bổ sung hiển thị cột tổng tiền lên lưới tìm kiếm | 2h | 2018-03-05 11:30 | 2018-03-05 14:30 | 23, 55 |  | -59.9d |  |
| 57 |  | Tích hợp xử lý tổng đài qua CRM | 2h | 2018-03-05 14:30 | 2018-03-05 16:30 | 24, 56 |  | -59.9d |  |
| 58 |  | Sử dụng MPT Object để PL nhóm KH ABCD, nhóm dịch vụ KH đang sử dụng | 3h | 2018-03-05 16:30 | 2018-03-06 10:30 | 25, 57 |  | -59.9d |  |
| 59 |  | Lưu điểm phản hồi của khách hàng khi KH đánh giá. | 2h | 2018-03-06 10:30 | 2018-03-06 13:30 | 26, 58 |  | -59.9d |  |
| 60 | 1.3.4 | **Báo cáo** | 4.5d | 2018-03-06 13:30 | 2018-03-13 08:30 |  |  | -59.9d |  |
| 61 |  | Báo cáo thời gian xử lý 1 lỗi, yêu cầu hoặc nhiều từ dự án ( thời gian CON nhập yêu cầu, thời gian SOF phản hồi deadline, thời gian SOF xử lý, thời gian CON xử lý hoàn tất yêu câu) | 6h | 2018-03-06 13:30 | 2018-03-07 10:30 | 28, 59 |  | -59.9d |  |
| 62 |  | Báo cáo thống kê kết quả CON kiểm tra 1 vấn đề sau khi SOF phản hồi xử lý hoàn tất | 6h | 2018-03-07 10:30 | 2018-03-08 08:30 | 29, 61 |  | -59.9d |  |
| 63 |  | Báo cáo so sánh cơ hội tuần này với tuần trước, kỳ này và kỳ trước...: số lượng, giá trị,… | 6h | 2018-03-08 08:30 | 2018-03-08 15:30 | 30, 62 |  | -59.9d |  |
| 64 |  | Báo cáo chi tiết kết quả thực hiện chiến dịch hàng tuần, hàng tháng,… theo nhân viên. | 6h | 2018-03-08 15:30 | 2018-03-09 13:30 | 31, 63 |  | -59.9d |  |
| 65 |  | Báo cáo các HelpDesk reopen, ghi nhân thông tin reopen bao nhiêu lần, nôi dung từng lần reopen | 6h | 2018-03-09 13:30 | 2018-03-12 10:30 | 32, 64 |  | -59.9d |  |
| 66 |  | Báo cáo tổng thời gian đã xử lý HelpDesk theo nhân viên | 6h | 2018-03-12 10:30 | 2018-03-13 08:30 | 33, 65 |  | -59.9d |  |
| 67 |  | Development Completed | 0d | 2018-01-24 08:00 | 2018-01-24 08:00 |  |  | -29d |  |
| 68 | 1.5 | **Test** | 3.84d | 2018-03-13 08:30 | 2018-03-16 16:12 | 35 |  | -59.9d |  |
| 69 | 1.5.1 | **Yêu cầu** | 1.19d | 2018-03-13 08:30 | 2018-03-14 10:00 |  |  | -59.9d |  |
| 70 |  | Bổ sung lấy mã phân tích dự án để bổ sung chọn dự án. | 0.5h | 2018-03-13 08:30 | 2018-03-13 09:00 |  |  | -59.9d |  |

| ID | WBS | Task | Duration | Start | Finish | Predecessors | Total float |
| --- | --- | --- | --- | --- | --- | --- | --- |
| 71 |  | Bổ sung cho phép chọn 1 or nhiều liên hệ của khách hàng | 0.5h | 2018-03-13 09:00 | 2018-03-13 09:30 | 70 | -59.9d |
| 72 |  | BS thiết lập chọn MPT dự án để gọi lên combobox | 0.5h | 2018-03-13 09:30 | 2018-03-13 10:00 | 71 | -59.9d |
| 73 |  | Sửa nghiệp vụ [Yêu cầu]: bổ sung thêm các thông tin yêu cầu nếu chưa có, thêm phân loại cần thiết | 2h | 2018-03-13 10:00 | 2018-03-13 12:00 | 72 | -59.9d |
| 74 |  | Bổ sung chức năng [Follow] | 4h | 2018-03-13 08:30 | 2018-03-13 13:30 |  | -57.06d |
| 75 |  | Bổ sung xử lý Add task và bắn qua QLCV | 1h | 2018-03-13 13:00 | 2018-03-13 14:00 | 73 | -59.9d |
| 76 |  | Nếu trạng thái là complain sẽ gửi email cho danh sách follower | 1h | 2018-03-13 14:00 | 2018-03-13 15:00 | 75 | -59.9d |
| 77 |  | Bổ sung xuất excel màn hình [Yêu cầu] | 1h | 2018-03-13 15:00 | 2018-03-13 16:00 | 76 | -59.9d |
| 78 |  | Gửi mail cho khách hàng khi hoàn tất yêu cầu của khách hàng kèm theo link đánh giá (theo mẫu) | 1h | 2018-03-13 16:00 | 2018-03-13 17:00 | 77 | -59.9d |
| 79 |  | Màn hình khách hàng đánh giá | 2h | 2018-03-14 08:00 | 2018-03-14 10:00 | 78 | -59.9d |
| 80 | 1.5.2 | **Đơn hàng bán** | 0.19d | 2018-03-14 10:00 | 2018-03-14 11:30 |  | -59.9d |
| 81 |  | Màn hình [Đơn hàng bán] bổ sung phân loại (Hợp đồng và đơn hàng) để quản lý | 0.5h | 2018-03-14 10:00 | 2018-03-14 10:30 | 79 | -59.9d |
| 82 |  | Tạo bảng quản lý Hợp đồng riêng tách với [Đơn hàng bán] | 0.5h | 2018-03-14 10:30 | 2018-03-14 11:00 | 81 | -59.9d |
| 83 |  | Đính MPT để quản lý mã số hợp đồng. | 0.5h | 2018-03-14 11:00 | 2018-03-14 11:30 | 82 | -59.9d |
| 84 | 1.5.3 | **Others** | 1.84d | 2018-03-13 13:30 | 2018-03-15 11:12 |  | -59.02d |
| 85 |  | Bổ sung chức năng duyệt | 4h | 2018-03-13 13:30 | 2018-03-14 08:30 | 74 | -57.06d |
| 86 |  | Bổ sung lấy địa chỉ email của khách hàng khi gửi mail | 0.5h | 2018-03-14 11:30 | 2018-03-14 12:00 | 83 | -59.9d |
| 87 |  | Bổ sung hiển thị thông tin cơ hội khi tạo phiếu báo giá | 0.7h | 2018-03-14 13:00 | 2018-03-14 13:42 | 86 | -59.9d |
| 88 |  | Sử dụng mã phân tích đối tượng CI để đưa vào CRM | 1h | 2018-03-14 13:42 | 2018-03-14 14:42 | 87 | -59.9d |
| 89 |  | Bổ sung hiển thị cột tổng tiền lên lưới tìm kiếm | 1h | 2018-03-14 14:42 | 2018-03-14 15:42 | 88 | -59.9d |
| 90 |  | Tích hợp xử lý tổng đài qua CRM | 2h | 2018-03-14 15:42 | 2018-03-15 08:42 | 89 | -59.9d |
| 91 |  | Sử dụng MPT Object để PL nhóm KH ABCD, nhóm dịch vụ KH đang sử dụng | 1.5h | 2018-03-15 08:42 | 2018-03-15 10:12 | 90 | -59.9d |
| 92 |  | Lưu điểm phản hồi của khách hàng khi KH đánh giá. | 1h | 2018-03-15 10:12 | 2018-03-15 11:12 | 91 | -59.9d |
| 93 | 1.5.4 | **Báo cáo** | 1.5d | 2018-03-15 11:12 | 2018-03-16 16:12 |  | -59.9d |
| 94 |  | Báo cáo thời gian xử lý 1 lỗi, yêu cầu hoặc nhiều từ dự án ( thời gian CON nhập yêu cầu, thời gian SOF phản hồi deadline, thời gian SOF xử lý, thời gian CON xử lý hoàn tất yêu câu) | 2h | 2018-03-15 11:12 | 2018-03-15 14:12 | 92 | -59.9d |
| 95 |  | Báo cáo thống kê kết quả CON kiểm tra 1 vấn đề sau khi SOF phản hồi xử lý hoàn tất | 2h | 2018-03-15 14:12 | 2018-03-15 16:12 | 94 | -59.9d |
| 96 |  | Báo cáo so sánh cơ hội tuần này với tuần trước, kỳ này và kỳ trước...: số lượng, giá trị,… | 2h | 2018-03-15 16:12 | 2018-03-16 09:12 | 95 | -59.9d |
| 97 |  | Báo cáo chi tiết kết quả thực hiện chiến dịch hàng tuần, hàng tháng,… theo nhân viên. | 2h | 2018-03-16 09:12 | 2018-03-16 11:12 | 96 | -59.9d |
| 98 |  | Báo cáo các HelpDesk reopen, ghi nhân thông tin reopen bao nhiêu lần, nôi dung từng lần reopen | 2h | 2018-03-16 11:12 | 2018-03-16 14:12 | 97 | -59.9d |
| 99 |  | Báo cáo tổng thời gian đã xử lý HelpDesk theo nhân viên | 2h | 2018-03-16 14:12 | 2018-03-16 16:12 | 98 | -59.9d |
| 100 |  | Test Completed | 0d | 2018-01-24 08:00 | 2018-01-24 08:00 |  | -29d |
| 101 | 1.7 | **Fix bug** | 3.84d | 2018-03-13 08:30 | 2018-03-16 16:12 | 35 | -59.9d |
| 102 | 1.7.1 | **Yêu cầu** | 1.19d | 2018-03-13 08:30 | 2018-03-14 10:00 |  | -59.06d |
| 103 |  | Bổ sung lấy mã phân tích dự án để bổ sung chọn dự án. | 0.5h | 2018-03-13 08:30 | 2018-03-13 09:00 |  | -59.12d |
| 104 |  | Bổ sung cho phép chọn 1 or nhiều liên hệ của khách hàng | 0.5h | 2018-03-13 09:00 | 2018-03-13 09:30 | 103 | -59.19d |
| 105 |  | BS thiết lập chọn MPT dự án để gọi lên combobox | 0.5h | 2018-03-13 09:30 | 2018-03-13 10:00 | 104 | -59.25d |
| 106 |  | Sửa nghiệp vụ [Yêu cầu]: bổ sung thêm các thông tin yêu cầu nếu chưa có, thêm phân loại cần thiết | 2h | 2018-03-13 10:00 | 2018-03-13 12:00 | 105 | -59.5d |
| 107 |  | Bổ sung chức năng [Follow] | 4h | 2018-03-13 08:30 | 2018-03-13 13:30 |  | -57.06d |
| 108 |  | Bổ sung xử lý Add task và bắn qua QLCV | 1h | 2018-03-13 13:00 | 2018-03-13 14:00 | 106 | -59.62d |
| 109 |  | Nếu trạng thái là complain sẽ gửi email cho danh sách follower | 1h | 2018-03-13 14:00 | 2018-03-13 15:00 | 108 | -59.75d |
| 110 |  | Bổ sung xuất excel màn hình [Yêu cầu] | 1h | 2018-03-13 15:00 | 2018-03-13 16:00 | 109 | -59.88d |
| 111 |  | Gửi mail cho khách hàng khi hoàn tất yêu cầu của khách hàng kèm theo link đánh giá (theo mẫu) | 1h | 2018-03-13 16:00 | 2018-03-13 17:00 | 110 | -59.9d |
| 112 |  | Màn hình khách hàng đánh giá | 2h | 2018-03-14 08:00 | 2018-03-14 10:00 | 111 | -59.9d |
| 113 | 1.7.2 | **Đơn hàng bán** | 0.19d | 2018-03-14 10:00 | 2018-03-14 11:30 |  | -59.9d |
| 114 |  | Màn hình [Đơn hàng bán] bổ sung phân loại (Hợp đồng và đơn hàng) để quản lý | 0.5h | 2018-03-14 10:00 | 2018-03-14 10:30 | 112 | -59.9d |
| 115 |  | Tạo bảng quản lý Hợp đồng riêng tách với [Đơn hàng bán] | 0.5h | 2018-03-14 10:30 | 2018-03-14 11:00 | 114 | -59.9d |
| 116 |  | Đính MPT để quản lý mã số hợp đồng. | 0.5h | 2018-03-14 11:00 | 2018-03-14 11:30 | 115 | -59.9d |
| 117 | 1.7.3 | **Others** | 1.84d | 2018-03-13 13:30 | 2018-03-15 11:12 |  | -59.02d |
| 118 |  | Bổ sung chức năng duyệt | 4h | 2018-03-13 13:30 | 2018-03-14 08:30 | 107 | -57.06d |
| 119 |  | Bổ sung lấy địa chỉ email của khách hàng khi gửi mail | 0.5h | 2018-03-14 11:30 | 2018-03-14 12:00 | 116 | -59.9d |
| 120 |  | Bổ sung hiển thị thông tin cơ hội khi tạo phiếu báo giá | 0.7h | 2018-03-14 13:00 | 2018-03-14 13:42 | 119 | -59.9d |
| 121 |  | Sử dụng mã phân tích đối tượng CI để đưa vào CRM | 1h | 2018-03-14 13:42 | 2018-03-14 14:42 | 120 | -59.9d |
| 122 |  | Bổ sung hiển thị cột tổng tiền lên lưới tìm kiếm | 1h | 2018-03-14 14:42 | 2018-03-14 15:42 | 121 | -59.9d |
| 123 |  | Tích hợp xử lý tổng đài qua CRM | 2h | 2018-03-14 15:42 | 2018-03-15 08:42 | 122 | -59.9d |
| 124 |  | Sử dụng MPT Object để PL nhóm KH ABCD, nhóm dịch vụ KH đang sử dụng | 1.5h | 2018-03-15 08:42 | 2018-03-15 10:12 | 123 | -59.9d |
| 125 |  | Lưu điểm phản hồi của khách hàng khi KH đánh giá. | 1h | 2018-03-15 10:12 | 2018-03-15 11:12 | 124 | -59.9d |
| 126 | 1.7.4 | **Báo cáo** | 1.5d | 2018-03-15 11:12 | 2018-03-16 16:12 |  | -59.9d |
| 127 |  | Báo cáo thời gian xử lý 1 lỗi, yêu cầu hoặc nhiều từ dự án ( thời gian CON nhập yêu cầu, thời gian SOF phản hồi deadline, thời gian SOF xử lý, thời gian CON xử lý hoàn tất yêu câu) | 2h | 2018-03-15 11:12 | 2018-03-15 14:12 | 125 | -59.9d |
| 128 |  | Báo cáo thống kê kết quả CON kiểm tra 1 vấn đề sau khi SOF phản hồi xử lý hoàn tất | 2h | 2018-03-15 14:12 | 2018-03-15 16:12 | 127 | -59.9d |
| 129 |  | Báo cáo so sánh cơ hội tuần này với tuần trước, kỳ này và kỳ trước...: số lượng, giá trị,… | 2h | 2018-03-15 16:12 | 2018-03-16 09:12 | 128 | -59.9d |
| 130 |  | Báo cáo chi tiết kết quả thực hiện chiến dịch hàng tuần, hàng tháng,… theo nhân viên. | 2h | 2018-03-16 09:12 | 2018-03-16 11:12 | 129 | -59.9d |
| 131 |  | Báo cáo các HelpDesk reopen, ghi nhân thông tin reopen bao nhiêu lần, nôi dung từng lần reopen | 2h | 2018-03-16 11:12 | 2018-03-16 14:12 | 130 | -59.9d |
| 132 |  | Báo cáo tổng thời gian đã xử lý HelpDesk theo nhân viên | 2h | 2018-03-16 14:12 | 2018-03-16 16:12 | 131 | -59.9d |
| 133 |  | Fix bug Completed | 0d | 2018-01-24 08:00 | 2018-01-24 08:00 |  | -29d |
| 134 |  | Release đợt 1 | 0d | 2018-01-24 08:00 | 2018-01-24 08:00 |  | -29d |
| 135 |  | Release đợt 2 | 0h | 2018-01-24 08:00 | 2018-01-24 08:00 |  | -29d |
| 136 |  | Release đợt 3 | 0h | 2018-01-24 08:00 | 2018-01-24 08:00 | 133 | -29d |

## Version 2 (data date 2018-02-07, saved 2018-02-27)

Last finish stays 2018-03-16. Complete tasks 9 → 13.

Changed:

| ID | Task | Start | Finish | Complete | Total float | Other |
| --- | --- | --- | --- | --- | --- | --- |
| 1 | **ASOFT-CRM** |  |  | 15% → 20% | -22.4d → -17.65d |  |
| 2 | **Analysis** |  |  | 29% → 38% | -12d → -7.25d |  |
| 14 | **Đơn hàng bán** |  |  | 11% → 33% |  |  |
| 15 | Màn hình [Đơn hàng bán] bổ sung phân loại (Hợp đồng và đơn hàng) để quản lý----Pending | 2018-02-02 10:00 A |  | 0% → 50% |  | was named Màn hình [Đơn hàng bán] bổ sung phân loại (Hợp đồng và đơn hàng) để quản lý |
| 18 | **Others** | 2018-02-06 13:00 A |  | 0% → 24% | -56.34d → -7.25d |  |
| 20 | Bổ sung lấy địa chỉ email của khách hàng khi gửi mail | 2018-02-06 13:00 A | 2018-02-06 14:00 A | 0% → 100% | -52.84d → none |  |
| 21 | Bổ sung hiển thị thông tin cơ hội khi tạo phiếu báo giá | 2018-02-06 14:00 A | 2018-02-06 16:00 A | 0% → 100% | -52.84d → none |  |
| 22 | Sử dụng mã phân tích đối tượng CI để đưa vào CRM | 2018-02-06 16:00 A | 2018-02-07 16:00 A | 0% → 100% | -52.84d → none |  |
| 23 | Bổ sung hiển thị cột tổng tiền lên lưới tìm kiếm | 2018-02-07 16:00 A |  | 0% → 20% |  |  |
| 26 | Lưu điểm phản hồi của khách hàng khi KH đánh giá. | 2018-02-21 09:00 A | 2018-02-21 10:00 A | 0% → 100% | -52.84d → none |  |
